# ProyectoABP

How a schedule from MS Project changed from version to version. A marks actual dates.

## Version 1 (saved 2017-11-02)

Note of the change: Merged branches

| ID | WBS | Task | Duration | Start | Finish | Predecessors | Complete | Total float | Constraint |
| --- | --- | --- | --- | --- | --- | --- | --- | --- | --- |
| 1 | 1 | **Hito 0** | 28d | 2017-09-11 09:00 | 2017-10-18 19:00 A |  | 100% |  | finish no later than 2017-10-18 19:00 |
| 2 |  | [PM] Rellenar documento de Concepto del proyecto | 1d | 2017-09-18 09:00 A | 2017-09-18 19:00 A |  | 100% |  | start no earlier than 2017-09-18 09:00 |
| 3 |  | [PM] Rellenar versión inicial del documento Especificación | 1d | 2017-09-19 09:00 A | 2017-09-19 19:00 A | 2 | 100% |  |  |
| 4 |  | [PM] Completar y revisar documento Especificación | 1d | 2017-09-20 09:00 A | 2017-09-20 19:00 A | 3 | 100% |  |  |
| 5 | 1.4 | **[PM] Elaborar el Presupuesto (hoja de cálculo)** | 6d | 2017-09-21 09:00 A | 2017-09-28 19:00 A | 2 | 100% |  |  |
| 6 |  | [PM] Rellenar del presupuesto | 3.75d | 2017-09-25 11:00 A | 2017-09-28 19:00 A | 8 | 100% |  |  |
| 7 |  | [PM] Reunirse con profesores | 2d | 2017-09-21 09:00 A | 2017-09-22 19:00 A | 2 | 100% |  |  |
| 8 |  | [PM] Rellenar documentos adicionales | 0.25d | 2017-09-25 09:00 A | 2017-09-25 11:00 A | 7 | 100% |  |  |
| 9 |  | [PM] Crear WBS del proyecto en Project | 3d | 2017-09-29 09:00 A | 2017-10-03 19:00 A | 5, 6, 7, 8 | 100% |  |  |
| 10 |  | [PM] Crear plan general (Tareas y precedencias básicas) en Project | 3d | 2017-10-16 09:00 A | 2017-10-18 19:00 A | 9 | 100% |  | finish no earlier than 2017-10-18 19:00 |
| 11 |  | [TDS] Elaboración Cue Sheet inicial | 0.88d | 2017-10-04 09:00 A | 2017-10-04 18:02 A |  | 100% |  | start no earlier than 2017-10-04 09:00 |
| 12 | 2 | **Hito 1** | 53.25d? | 2017-10-19 15:00 A | 2018-01-02 17:00 | 1 | 11% | 106.25d |  |
| 13 | 2.1 | **Iteración 1** | 9.25d | 2017-10-19 15:00 A | 2017-11-01 17:00 | 1 | 98% | 7.05d |  |
| 14 |  | [PM] Registrar tiempos y % de realización de tareas en Project (1/5) | 8.5d | 2017-10-19 15:00 A | 2017-10-31 19:00 A |  | 100% |  | finish no earlier than 2017-10-31 19:00 |
| 15 |  | [PD] Bocetar cartel | 0.75d | 2017-10-20 09:00 A | 2017-10-20 17:00 A |  | 100% |  | start no earlier than 2017-10-20 09:00 |
| 16 |  | [TAG] Instalar librería matemática (glm/glmatriz) | 0.5d | 2017-10-24 09:00 A | 2017-10-24 13:00 A |  | 100% |  | start no earlier than 2017-10-24 09:00 |
| 17 |  | [TAG] Instalar librería de lectura de mallas (assimp…) | 1.25d | 2017-10-24 17:00 A | 2017-10-25 19:00 A |  | 100% |  | finish no earlier than 2017-10-25 19:00 |
| 18 |  | [TAG] Instalar librería de entrada/salida (SFML…) | 1.25d | 2017-10-24 17:00 A | 2017-10-25 19:00 A |  | 100% |  | finish no earlier than 2017-10-25 19:00 |
| 19 |  | [PM] Detallar plan iteraciones del mes de Noviembre. Creación Subtareas y precedencias en Project (1/2) | 1.2d | 2017-10-24 09:00 A | 2017-10-25 10:36 A | 10 | 100% |  | start no earlier than 2017-10-24 09:00 |
| 20 |  | [TDS] Añadir elementos sonoros a la Cue Sheet (1/5) | 0.25d | 2017-10-26 09:00 | 2017-10-26 11:00 | 11 |  | 11.55d | start no earlier than 2017-10-26 09:00 |
| 21 |  | [PD] Bocetar logo | 0.75d | 2017-10-27 09:00 A | 2017-10-27 17:00 A |  | 100% |  | start no earlier than 2017-10-27 09:00 |
| 22 |  | [PM] Detallar plan iteraciones del mes de Noviembre. Asignar recursos a las tareas en Project (1/2) | 1.2d | 2017-10-27 09:00 A | 2017-10-30 10:36 A | 19 | 100% |  | start no earlier than 2017-10-27 09:00 |
| 23 |  | [PM] Realizar informe iteración 1 | 0.75d | 2017-11-01 09:00 A | 2017-11-01 17:00 A | 19, 22, 15, 21 | 100% |  | start no earlier than 2017-11-01 09:00 |
| 24 |  | Objetivo Iteración 1 | 0d | 2017-11-01 17:00 | 2017-11-01 17:00 | 23 |  | 7.05d |  |
| 25 | 2.2 | **Iteración 2** | 10d | 2017-11-02 09:00 | 2017-11-15 19:00 | 13 |  |  |  |
| 26 |  | [PM] Registrar tiempos y % de realización de tareas en Project (2/5) | 9.5d | 2017-11-01 15:00 | 2017-11-14 19:00 |  |  | 7.3d | finish no earlier than 2017-11-14 19:00 |
| 27 |  | [V1] Iniciar el documento de diseño de mecánicas de los NPCs | 0.5d | 2017-11-02 09:00 | 2017-11-02 13:00 |  |  | 12.8d |  |
| 28 |  | [V1] Iniciar el documento de diseño de toma de decisión: espacio y métodos | 0.94d | 2017-11-02 09:00 | 2017-11-02 18:31 |  |  | 12.36d |  |
| 29 |  | [V1] Iniciar el documento de diseño técnico del motor de IA | 0.94d | 2017-11-03 09:28 | 2017-11-03 19:00 |  |  | 14.3d | finish no earlier than 2017-11-03 19:00 |
| 30 |  | [V2] Diseño inicial de la arquitectura basada en componentes | 0.5d | 2017-11-03 09:00 | 2017-11-03 13:00 |  |  | 14.8d | start no earlier than 2017-11-03 09:00 |
| 31 |  | [RV] Bocetar los personajes | 0.25d | 2017-11-03 09:00 | 2017-11-03 11:00 |  |  | 148.75d | start no earlier than 2017-11-03 09:00 |
| 32 |  | [V2] Definición inicial del formato para la definición de niveles (1/2) | 0.25d | 2017-11-06 09:00 | 2017-11-06 11:00 |  |  | 14.05d | start no earlier than 2017-11-06 09:00 |
| 33 |  | [V2] Instalación irrLicht | 0.5d | 2017-11-06 09:00 | 2017-11-06 13:00 |  |  | 10.8d | start no earlier than 2017-11-06 09:00 |
| 34 |  | [V1] Aprender y plantear inicialmente el sistema de Lógica Difusa | 3d | 2017-11-07 09:00 | 2017-11-09 19:00 | 33, 28, 29 |  | 144d | start no earlier than 2017-11-07 09:00 |
| 35 |  | [V1] Aprender y plantear inicialmente el sistema de Waypoints | 3d | 2017-11-07 09:00 | 2017-11-09 19:00 | 33, 28, 29 |  | 144d | start no earlier than 2017-11-07 09:00 |
| 36 |  | [PM] Rellenar documento Gestión de riesgos | 0.5d | 2017-11-08 09:00 | 2017-11-08 13:00 |  |  | 11.8d | start no earlier than 2017-11-08 09:00 |
| 37 |  | [TDS] Añadir sonidos externos a la biblioteca de sonido(1/4) | 0.4d | 2017-11-10 09:00 | 2017-11-10 12:12 |  |  | 143.48d | start no earlier than 2017-11-10 09:00 |
| 38 |  | [TDS] Actualizar hoja de metadatos (1/4) | 0.12d | 2017-11-10 12:12 | 2017-11-10 15:09 | 37 |  | 143.48d | start no earlier than 2017-11-10 09:00 |
| 39 |  | [TDS] Añadir elementos sonoros a la Cue Sheet (2/5) | 0.25d | 2017-11-10 09:00 | 2017-11-10 11:00 |  |  | 143.75d | start no earlier than 2017-11-10 09:00 |
| 40 |  | [V2] Realización del sistema de control del player por motor de físicas 2D, dynamic o kinematic | 3d | 2017-11-07 09:00 | 2017-11-09 19:00 | 27, 28, 33 |  | 10.3d | start no earlier than 2017-11-07 09:00 |
| 41 |  | [PD] Diseño final del logo de la empresa | 2d | 2017-11-13 09:00 | 2017-11-14 19:00 | 21 |  | 7.3d | start no earlier than 2017-11-13 09:00 |
| 42 |  | [PM] Detallar plan iteraciones del mes de Noviembre. Creación Subtareas y precedencias en Project (2/2) | 0.5d | 2017-11-14 09:00 | 2017-11-14 13:00 | 19, 22 |  | 7.3d | start no earlier than 2017-11-14 09:00 |
| 43 |  | [PM] Detallar plan iteraciones del mes de Noviembre. Asignar recursos a las tareas en Project (2/2) | 0.5d | 2017-11-14 15:00 | 2017-11-14 19:00 | 42 |  | 7.3d | finish no earlier than 2017-11-06 19:00 |
| 44 |  | [PM] Realizar informe iteración 2 | 0.75d | 2017-11-15 09:00 | 2017-11-15 17:00 | 26, 27, 28, 40, 29, 30, 32, 36, 41, 42, 43 |  | 7.3d |  |
| 45 |  | Objetivo iteración 2 | 0d | 2017-11-15 17:00 | 2017-11-15 17:00 | 44 |  | 7.3d |  |
| 46 | 2.3 | **Iteración 3** | 10d | 2017-11-16 09:00 | 2017-11-29 19:00 | 25 |  |  |  |
| 47 |  | [PM] Detallar plan iteraciones del mes de Diciembre. Creación Subtareas y precedencias en Project (1/2) | 1.2d | 2017-11-16 09:00 | 2017-11-17 10:36 | 22 |  | 18.4d |  |
| 48 |  | [PM] Detallar plan iteraciones del mes de Diciembre. Asignar recursos a las tareas en Project (1/2) | 1.2d | 2017-11-17 10:36 | 2017-11-20 12:12 | 47 |  | 18.4d |  |
| 49 |  | [PM] Registrar tiempos y % de realización de tareas en Project (3/5) | 0.45d | 2017-11-16 09:00 | 2017-11-16 12:36 | 26 |  | 20.35d |  |
| 50 |  | [V1] Acabar el documento de diseño de mecánicas de los NPCs | 0.5d | 2017-11-02 09:00 | 2017-11-02 13:00 |  |  | 149.5d | start no earlier than 2017-11-02 09:00 |
| 51 |  | [V1] Acabar el documento de diseño de toma de decisión: espacio y métodos | 0.94d | 2017-11-02 09:00 | 2017-11-02 18:31 |  |  | 149.06d | start no earlier than 2017-11-02 09:00 |
| 52 |  | [V1] Acabar el documento de diseño técnico del motor de IA | 0.94d | 2017-11-03 09:00 | 2017-11-03 18:31 |  |  | 148.06d | start no earlier than 2017-11-03 09:00 |
| 53 |  | [V1] Sistema de toma de decisión con Lógica Difusa | 6.25d | 2017-11-16 09:00 | 2017-11-24 11:00 |  |  | 7.05d |  |
| 54 |  | [V1] Sistema de Waypoints para pathfinding continuo | 7.5d | 2017-11-24 11:00 | 2017-12-05 17:00 | 53 |  | 7.05d |  |
| 55 |  | [V2] Mecánicas de acción | 1.88d | 2017-11-16 09:00 | 2017-11-17 18:02 |  |  | 18.92d |  |
| 56 |  | [V2] Formato propio para la definición de los niveles (documento con la especificación del formato) (2/2) | 1.25d | 2017-11-16 09:00 | 2017-11-17 11:00 |  |  | 19.55d |  |
| 57 |  | [RV] Bocetos de los elementos | 1d | 2017-11-16 09:00 | 2017-11-16 19:00 |  |  | 19.8d |  |
| 58 |  | Objetivo iteración 3 | 0d | 2017-12-05 17:00 | 2017-12-05 17:00 | 47, 48, 49, 53, 54, 55, 56, 57 |  | 7.05d |  |
| 59 | 2.4 | **Iteración 4** | 10d | 2017-11-30 09:00 | 2017-12-13 19:00 | 46 |  |  |  |
| 60 |  | [PM] Detallar plan iteraciones del mes de Diciembre. Creación Subtareas y precedencias en Project (2/2) | 1.2d | 2017-11-17 17:24 | 2017-11-20 19:00 | 22 |  | 25.25d | finish no earlier than 2017-11-20 19:00 |
| 61 |  | [PM] Detallar plan iteraciones del mes de Diciembre. Asignar recursos a las tareas en Project (2/2) | 1.2d | 2017-11-21 17:24 | 2017-11-22 19:00 | 47 |  | 17d | finish no earlier than 2017-11-22 19:00 |
| 62 |  | [V1] Sistema de gestión de eventos (Trigger System/Event Manager) | 6.88d | 2017-11-30 09:57 | 2017-12-08 19:00 |  |  | 123d | finish no earlier than 2017-12-08 19:00 |
| 63 |  | [V1] Sistema de percepción sensorial (vista, oído, olfato, canales…) | 6.25d | 2017-11-30 09:00 | 2017-12-08 11:00 | 61 |  | 12d |  |
| 64 |  | [V2] Utilización de propiedades físicas en las mecánicas jugables | 1.88d | 2017-11-30 09:00 | 2017-12-01 18:02 |  |  | 16.37d |  |
| 65 |  | [V2] Implementación de cámara de seguimiento | 1.88d | 2017-11-30 09:00 | 2017-12-01 18:02 |  |  | 16.37d |  |
| 66 |  | [RV] Bocetos del entorno | 1d | 2017-11-30 09:00 | 2017-11-30 19:00 |  |  | 17.25d |  |
| 67 |  | Objetivo iteración 4 | 0d | 2017-12-08 11:00 | 2017-12-08 11:00 | 60, 61, 63, 64, 65, 66 |  | 12d |  |
| 68 | 2.5 | **Iteración 5** | 7d | 2017-12-14 09:00 | 2017-12-22 19:00 | 59 |  |  |  |
| 69 |  | [PM] Registrar tiempos y % de realización de tareas en Project (5/5) | 0.45d | 2017-12-14 09:00 | 2017-12-14 12:36 | 60 |  | 21.55d |  |
| 70 |  | [PM] Comparar la planificación prevista y real en Project hito 1 | 2.25d | 2017-12-14 09:00 | 2017-12-18 11:00 |  |  | 14.5d |  |

| ID | WBS | Task | Duration | Start | Finish | Predecessors | Total float | Constraint |
| --- | --- | --- | --- | --- | --- | --- | --- | --- |
| 71 |  | [PM] Aplicar el modelo EVA en Project | 2.25d | 2017-12-14 09:00 | 2017-12-18 11:00 |  | 19.75d |  |
| 72 |  | [PM] Confeccionar Informes de iteración e informe resumen de Hito 1 | 2.25d | 2017-12-18 11:00 | 2017-12-20 13:00 | 70 | 14.5d |  |
| 73 |  | [PM] Elaborar la presentación del Hito 1 | 1.5d | 2017-12-20 15:00 | 2017-12-21 19:00 | 72 | 14.5d |  |
| 74 |  | [PM] Exponer la presentación del Hito 1 | 1.5d | 2017-12-22 09:00 | 2017-12-25 13:00 | 73 | 14.5d |  |
| 75 |  | [V1] Diseño de requerimientos y funciones de red | 1.25d | 2017-11-02 17:00 | 2017-11-03 19:00 |  | 148d | finish no earlier than 2017-11-03 19:00 |
| 76 |  | [V1] Diseño técnico del motor de red | 1.88d | 2017-11-02 09:57 | 2017-11-03 19:00 |  | 148d | finish no earlier than 2017-11-03 19:00 |
| 77 |  | [V1] Sistema de toma de decisión con Behaviour Trees | 4.38d | 2017-12-14 09:00 | 2017-12-20 12:02 |  | 17.62d |  |
| 78 |  | [V2] Diseño e implementación de la arquitectura basada en componentes (diagrama de clases e implementación) | 11.25d | 2017-12-14 09:00 | 2017-12-29 11:00 |  | 8.25d |  |
| 79 |  | [V2] Mecánicas básicas entidades sin IA | 2.5d | 2017-12-29 11:00 | 2018-01-02 17:00 | 78 | 8.25d |  |
| 80 |  | [TDS] Síntesis | 3.75d | 2017-12-15 16:02 | 2017-12-21 12:02 | 84 | 12.87d |  |
| 81 |  | [TDS] Grabaciones propias | 3.75d | 2017-12-15 16:02 | 2017-12-21 12:02 | 84 | 16.62d |  |
| 82 |  | [TDS] Sonidos externos | 3.75d | 2017-12-15 16:02 | 2017-12-21 12:02 | 84 | 16.62d |  |
| 83 |  | [TDS] Música | 3.75d | 2017-12-21 12:02 | 2017-12-27 10:02 | 80 | 12.87d |  |
| 84 |  | [TDS] Cue Sheet | 1.63d | 2017-12-14 09:00 | 2017-12-15 16:02 |  | 12.87d |  |
| 85 |  | [TDS] Hoja de metadatos | 1.88d | 2017-12-14 09:00 | 2017-12-15 18:02 |  | 20.12d |  |
| 86 |  | [TDS] Integración del motor de audio en el juego con prueba de concepto | 3.75d | 2017-12-14 09:00 | 2017-12-19 17:00 |  | 18.25d |  |
| 87 |  | [PD] Vídeo con animación del logo de la empresa | 7.5d | 2017-12-14 09:00 | 2017-12-25 13:00 |  | 14.5d |  |
| 88 |  | Objetivo iteración 5 | 0d | 2018-01-02 17:00 | 2018-01-02 17:00 | 69, 70, 71, 72, 73, 74, 77, 78, 79, 80, 81, 82, 83, 84, 85, 86, 87 | 8.25d |  |
| 89 | 3 | **Hito 2** | 16d | 2018-01-07 09:00 | 2018-01-26 19:00 | 12 |  |  |
| 90 |  | [PM] Revisar especificación proyecto | 3d | 2018-01-08 09:00 | 2018-01-10 19:00 |  | 77.5d |  |
| 91 |  | [PM] Reestimar proyecto | 3d | 2018-01-08 09:00 | 2018-01-10 19:00 |  | 77.5d |  |
| 92 |  | [PM] Detallar plan iteraciones del mes de Enero. Creación Subtareas y precedencias en Project | 1d | 2018-01-08 09:00 | 2018-01-08 19:00 |  | 79.5d |  |
| 93 |  | [PM] Detallar plan iteraciones del mes de Enero. Asignar recursos a las tareas en Project | 1d | 2018-01-08 09:00 | 2018-01-08 19:00 |  | 79.5d |  |
| 94 |  | [PM] Registrar tiempos y % de realización de tareas en Project | 0.63d | 2018-01-08 09:00 | 2018-01-08 16:02 |  | 79.87d |  |
| 95 |  | [PM] Comparar la planificación prevista y real en Project hito 2 | 0.63d | 2018-01-08 09:00 | 2018-01-08 16:02 |  | 79.87d |  |
| 96 |  | [PM] Confeccionar Informes de iteración e informe resumen de Hito 2 | 0.63d | 2018-01-08 09:00 | 2018-01-08 16:02 |  | 79.87d |  |
| 97 |  | [V1] Sistema de depuración visual in-game de la IA | 3.75d | 2018-01-08 09:00 | 2018-01-11 17:00 |  | 76.75d |  |
| 98 |  | [V1] Multijugador en tiempo real | 11.25d | 2018-01-08 09:00 | 2018-01-23 11:00 |  | 69.25d |  |
| 99 |  | [V2] Power-ups y elementos adicionales | 5d | 2018-01-08 09:00 | 2018-01-12 19:00 |  | 75.5d |  |
| 100 |  | [V2] Creación de un cargador de niveles | 3.13d | 2018-01-08 09:00 | 2018-01-11 10:02 |  | 77.37d |  |
| 101 |  | [V2] Gestión de colisiones de la cámara (sistema de depuración para ver colisiones) | 1.88d | 2018-01-08 09:00 | 2018-01-09 18:02 |  | 78.62d |  |
| 102 |  | [V2] Integración de librería para GUI | 0.63d | 2018-01-08 09:00 | 2018-01-08 16:02 |  | 79.87d |  |
| 103 | 4 | **Hito 3** | 35d | 2018-02-07 09:00 | 2018-03-27 19:00 | 89 |  |  |
| 104 |  | [PM] Detallar plan iteraciones del mes de Febrero-Marzo. Creación Subtareas y precedencias en Project | 1d | 2018-02-07 09:00 | 2018-02-07 19:00 |  | 68.75d |  |
| 105 |  | [PM] Detallar plan iteraciones del mes de Febrero-Marzo Asignar recursos a las tareas en Project | 1d | 2018-02-07 09:00 | 2018-02-07 19:00 |  | 68.75d |  |
| 106 |  | [PM] Registrar tiempos y % de realización de tareas en Project | 0.63d | 2018-02-07 09:00 | 2018-02-07 16:02 |  | 69.12d |  |
| 107 |  | [PM] Comparar la planificación prevista y real en Project hito 3 | 0.63d | 2018-02-07 09:00 | 2018-02-07 16:02 |  | 69.12d |  |
| 108 |  | [PM] Confeccionar Informes de iteración e informe resumen de Hito 3 | 0.63d | 2018-02-07 09:00 | 2018-02-07 16:02 |  | 69.12d |  |
| 109 |  | [PM] Elaborar la presentación del Hito 3 | 0.75d | 2018-02-07 09:00 | 2018-02-07 17:00 |  | 69d |  |
| 110 |  | [PM] Exponer la presentación del Hito 3 | 0.75d | 2018-02-07 09:00 | 2018-02-07 17:00 |  | 69d |  |
| 111 |  | [TAG] Estructura básica del nodo (array de hijos, puntero a padre, puntero a entidad, funcionalidad básica -constructor, destructor, gets, sets, manejo de hijos….) | 0.5d | 2018-02-07 09:00 | 2018-02-07 13:00 |  | 69.25d |  |
| 112 |  | [TAG] Recorrido-dibujado del árbol | 0.5d | 2018-02-07 09:00 | 2018-02-07 13:00 |  | 69.25d |  |
| 113 |  | [TAG] Estructura básica de la entidad (Constructor, destructor, funciones… todas virtuales, vacías) | 0.5d | 2018-02-07 09:00 | 2018-02-07 13:00 |  | 69.25d |  |
| 114 |  | [TAG] Matrices (model, view, projection) y pila estáticas y su manejo | 0.63d | 2018-02-07 09:00 | 2018-02-07 16:02 |  | 69.12d |  |
| 115 |  | [TAG] Estructura básica de la transformación (Constructor, destructor, matriz transformación…) | 0.5d | 2018-02-07 09:00 | 2018-02-07 13:00 |  | 69.25d |  |
| 116 |  | [TAG] Operaciones de transformación (trasladar, rotar, escalar, identidad, trasponer, invertir, todas con GLM) | 0.75d | 2018-02-07 09:00 | 2018-02-07 17:00 |  | 69d |  |
| 117 |  | [TAG] Dibujado (begindraw, enddraw, manejo pila y matriz model) | 0.75d | 2018-02-07 09:00 | 2018-02-07 17:00 |  | 69d |  |
| 118 |  | [TAG] Estructura básica de la cámara (Constructor, destructor, matriz proyección) | 0.38d | 2018-02-07 09:00 | 2018-02-07 12:02 |  | 69.37d |  |
| 119 |  | [TAG] Rellenar matriz perspectiva (con glm) | 0.25d | 2018-02-07 09:00 | 2018-02-07 11:00 |  | 69.5d |  |
| 120 |  | [TAG] Estructura básica de la luz (Constructor, destructor) | 0.38d | 2018-02-07 09:00 | 2018-02-07 12:02 |  | 69.37d |  |
| 121 |  | [TAG] Datos y funciones luz puntual | 0.38d | 2018-02-07 09:00 | 2018-02-07 12:02 |  | 69.37d |  |
| 122 |  | [TAG] Estructura básica de la malla (Constructor, destructor) | 0.38d | 2018-02-07 09:00 | 2018-02-07 12:02 |  | 69.37d |  |
| 123 |  | [TAG] Datos de mallas, texturas, materiales… (llamadas al gestor de recursos) | 0.5d | 2018-02-07 09:00 | 2018-02-07 13:00 |  | 69.25d |  |
| 124 |  | [TAG] Dibujado (begindraw, enddraw, matriz model…) | 0.63d | 2018-02-07 09:00 | 2018-02-07 16:02 |  | 69.12d |  |
| 125 |  | [TAG] Estructura básica del gestor de recursos (constructor, destructor, vectores de recursos) | 0.5d | 2018-02-07 09:00 | 2018-02-07 13:00 |  | 69.25d |  |
| 126 |  | [TAG] Obtener recurso (gestión adecuada de memoria) | 0.75d | 2018-02-07 09:00 | 2018-02-07 17:00 |  | 69d |  |
| 127 |  | [TAG] Estructura básica del recurso (constructor, destructor. Es virtual, vacío) | 0.38d | 2018-02-07 09:00 | 2018-02-07 12:02 |  | 69.37d |  |
| 128 |  | [TAG] Estructura básica de la malla (constructor, destructor) | 0.5d | 2018-02-07 09:00 | 2018-02-07 13:00 |  | 69.25d |  |
| 129 |  | [TAG] Lectura de disco (con assimp) | 0.75d | 2018-02-07 09:00 | 2018-02-07 17:00 |  | 69d |  |
| 130 |  | [TAG] Creación de buffers de vértices, normales, índices… y relleno | 1d | 2018-02-07 09:00 | 2018-02-07 19:00 |  | 68.75d |  |
| 131 |  | [TAG] Dibujado de las mallas (draw, con paso de los buffers a OpenGL) | 1d | 2018-02-07 09:00 | 2018-02-07 19:00 |  | 68.75d |  |
| 132 |  | [TAG] Estructura básica de la textura (constructor, destructor) | 0.25d | 2018-02-07 09:00 | 2018-02-07 11:00 |  | 69.5d |  |
| 133 |  | [TAG] Leer de disco (con librería) y rellenar buffers | 0.75d | 2018-02-07 09:00 | 2018-02-07 17:00 |  | 69d |  |
| 134 |  | [TAG] Dibujado (preparar las texturas y cargarlas en OpenGL) | 1d | 2018-02-07 09:00 | 2018-02-07 19:00 |  | 68.75d |  |
| 135 |  | [TAG] Estructura básica del material (constructor, destructor) | 0.25d | 2018-02-07 09:00 | 2018-02-07 11:00 |  | 69.5d |  |
| 136 |  | [TAG] Leer de disco (con librería o con parser propio) y rellenar valores | 0.63d | 2018-02-07 09:00 | 2018-02-07 16:02 |  | 69.12d |  |
| 137 |  | [TAG] Dibujado (preparar los materiales y cargarlos en OpenGL) | 0.5d | 2018-02-07 09:00 | 2018-02-07 13:00 |  | 69.25d |  |
| 138 |  | [TAG] Estructura básica del shader (constructor, destructor) | 0.5d | 2018-02-07 09:00 | 2018-02-07 13:00 |  | 69.25d |  |
| 139 |  | [TAG] Lectura de disco (con parser propio) y guardarlo | 0.88d | 2018-02-07 09:00 | 2018-02-07 18:02 |  | 68.87d |  |
| 140 |  | [TAG] Estructura básica de la fachada (constructor, destructor, inicialización motor y openGL) | 0.75d | 2018-02-07 09:00 | 2018-02-07 17:00 |  | 69d |  |

| ID | WBS | Task | Duration | Start | Finish | Predecessors | Total float |
| --- | --- | --- | --- | --- | --- | --- | --- |
| 141 |  | [TAG] Funciones para crear cámaras y gestionarlas (manejo de las cámaras, registro, cálculo de la matriz view) | 1.25d | 2018-02-07 09:00 | 2018-02-08 11:00 |  | 68.5d |
| 142 |  | [TAG] Funciones para crear luces y gestionarlas (manejo de las luces registro, cálculo de la matriz light) | 0.75d | 2018-02-07 09:00 | 2018-02-07 17:00 |  | 69d |
| 143 |  | [TAG] Funciones para crear transformaciones (creación de varios nodos con las transformaciones, manejo de las transformaciones) | 0.75d | 2018-02-07 09:00 | 2018-02-07 17:00 |  | 69d |
| 144 |  | [TAG] Funciones para crear mallas y animaciones | 0.75d | 2018-02-07 09:00 | 2018-02-07 17:00 |  | 69d |
| 145 |  | [TAG] Funciones para crear shaders y gestionarlos | 0.75d | 2018-02-07 09:00 | 2018-02-07 17:00 |  | 69d |
| 146 |  | [TAG] Shader básico (Sombreado de Phong, reflexión de Phong) con materiales | 0.63d | 2018-02-07 09:00 | 2018-02-07 16:02 |  | 69.12d |
| 147 |  | [TAG] Integración con la aplicación | 3.75d | 2018-02-07 09:00 | 2018-02-12 17:00 |  | 66d |
| 148 |  | [TAG] Realización de una fachada genérica | 1.88d | 2018-02-07 09:00 | 2018-02-08 18:02 |  | 67.87d |
| 149 |  | [V1] Gestión de recursos de IA con Level-of-Detail (LoD) | 6.25d | 2018-02-07 09:00 | 2018-02-15 11:00 |  | 63.5d |
| 150 |  | [V1] Sistema de predicción de movimiento multijugador en tiempo real | 3.75d | 2018-02-07 09:00 | 2018-02-12 17:00 |  | 66d |
| 151 |  | [V1] Sistema de depuración visual del motor de Red | 3.75d | 2018-02-07 09:00 | 2018-02-12 17:00 |  | 66d |
| 152 |  | [V2] Diseño y creación de niveles | 5d | 2018-02-07 09:00 | 2018-02-13 19:00 |  | 64.75d |
| 153 |  | [V2] Implementación de menús | 3.75d | 2018-02-07 09:00 | 2018-02-12 17:00 |  | 66d |
| 154 |  | [V2] Implementación del HUD | 2.5d | 2018-02-07 09:00 | 2018-02-09 13:00 |  | 67.25d |
| 155 |  | [V2] Implementación de clipping (comparativa de FPS con/sin oclusiones) | 1.25d | 2018-02-07 09:00 | 2018-02-08 11:00 |  | 68.5d |
| 156 |  | [V2] Oclusiones mediante tecnicas de rasterización (comparativa de FPS con/sin oclusiones) | 1.25d | 2018-02-07 09:00 | 2018-02-08 11:00 |  | 68.5d |
| 157 |  | [V2] Sistema de Level-Of-Detail (LoD) para la selección de la malla gráfica de los objetos | 1.88d | 2018-02-07 09:00 | 2018-02-08 18:02 |  | 67.87d |
| 158 |  | [V2] Sistema de Level-Of-Detail continuo (CLoD) para el terreno | 3.13d | 2018-02-07 09:00 | 2018-02-12 10:02 |  | 66.62d |
| 159 |  | [V2] Creación e implementación del skybox | 3.13d | 2018-02-07 09:00 | 2018-02-12 10:02 |  | 66.62d |
| 160 |  | [TDS] Resto de la biblioteca (máx. 1/3), cuesheet y metadatos finales | 7.5d | 2018-02-07 09:00 | 2018-02-16 13:00 |  | 62.25d |
| 161 |  | [PD] Cartel juego/proyecto | 3.75d | 2018-02-07 09:00 | 2018-02-12 17:00 |  | 66d |
| 162 |  | [PD] Trailer juego/proyecto | 11.25d | 2018-02-07 09:00 | 2018-02-22 11:00 |  | 58.5d |
| 163 |  | [RV] Modelado de los personajes | 7.5d | 2018-02-07 09:00 | 2018-02-16 13:00 |  | 62.25d |
| 164 |  | [RV] Texturizado de los personajes | 6d | 2018-02-07 09:00 | 2018-02-14 19:00 |  | 63.75d |
| 165 |  | [RV] Modelado del entorno y elementos | 11d | 2018-02-07 09:00 | 2018-02-21 19:00 |  | 58.75d |
| 166 | 5 | **Hito 4** | 46d | 2018-03-28 09:00 | 2018-05-30 19:00 | 103 |  |
| 167 |  | [PM] Detallar plan iteraciones del mes de Abril-Mayo. Creación Subtareas y precedencias en Project | 1d | 2018-03-28 09:00 | 2018-03-28 19:00 |  | 45d |
| 168 |  | [PM] Detallar plan iteraciones del mes de Abril-Mayo. Asignar recursos a las tareas en Project | 1d | 2018-03-28 09:00 | 2018-03-28 19:00 |  | 45d |
| 169 |  | [PM] Registrar tiempos y % de realización de tareas en Project | 0.63d | 2018-03-28 09:00 | 2018-03-28 16:02 |  | 45.37d |
| 170 |  | [PM] Comparar la planificación prevista y real en Project hito 4 | 0.63d | 2018-03-28 09:00 | 2018-03-28 16:02 |  | 45.37d |
| 171 |  | [PM] Confeccionar Informes de iteración e informe resumen de Hito 4 | 0.63d | 2018-03-28 09:00 | 2018-03-28 16:02 |  | 45.37d |
| 172 |  | [PM] Elaborar la presentación del Hito 4 | 0.75d | 2018-03-28 09:00 | 2018-03-28 17:00 |  | 45.25d |
| 173 |  | [PM] Exponer la presentación del Hito 4 | 0.75d | 2018-03-28 09:00 | 2018-03-28 17:00 |  | 45.25d |
| 174 |  | [TAG] Datos y funciones luz dirigida | 0.63d | 2018-03-28 09:00 | 2018-03-28 16:02 |  | 45.37d |
| 175 |  | [TAG] Otros tipos de luces | 11.25d | 2018-03-28 09:00 | 2018-04-12 11:00 |  | 34.75d |
| 176 |  | [TAG] Estructura básica de la animación (Constructor, destructor) | 0.5d | 2018-03-28 09:00 | 2018-03-28 13:00 |  | 45.5d |
| 177 |  | [TAG] Datos de animaciones, mallas, texturas, materiales (multiples, con llamadas al gestor de recursos) | 0.63d | 2018-03-28 09:00 | 2018-03-28 16:02 |  | 45.37d |
| 178 |  | [TAG] Getión temporal de las animaciones (frames…) | 0.75d | 2018-03-28 09:00 | 2018-03-28 17:00 |  | 45.25d |
| 179 |  | [TAG] Dibujado (begindraw, enddraw, matriz model…) | 0.75d | 2018-03-28 09:00 | 2018-03-28 17:00 |  | 45.25d |
| 180 |  | [TAG] Shader Cartoon | 1.88d | 2018-03-28 09:00 | 2018-03-29 18:02 |  | 44.12d |
| 181 |  | [TAG] Shader light mapping | 1.88d | 2018-03-28 09:00 | 2018-03-29 18:02 |  | 44.12d |
| 182 |  | [TAG] Shader Deferred Shading | 2.75d | 2018-03-28 09:00 | 2018-03-30 17:00 |  | 43.25d |
| 183 |  | [TAG] Bounding boxes (incluye retocar nodos, entidades y recursos malla) | 1.5d | 2018-03-28 09:00 | 2018-03-29 13:00 |  | 44.5d |
| 184 |  | [TAG] Backface culling | 0.5d | 2018-03-28 09:00 | 2018-03-28 13:00 |  | 45.5d |
| 185 |  | [TAG] Frustum culling | 2.5d | 2018-03-28 09:00 | 2018-03-30 13:00 |  | 43.5d |
| 186 |  | [TAG] Shadow mapping | 3.13d | 2018-03-28 09:00 | 2018-04-02 10:02 |  | 42.87d |
| 187 |  | [TAG] Sombras volumétricas | 4.38d | 2018-03-28 09:00 | 2018-04-03 12:02 |  | 41.62d |
| 188 |  | [TAG] Sistema de partículas (sólo la incorporación en el motor) | 3.13d | 2018-03-28 09:00 | 2018-04-02 10:02 |  | 42.87d |
| 189 |  | [TAG] Billboards (sólo la parte de visualización) | 1.25d | 2018-03-28 09:00 | 2018-03-29 11:00 |  | 44.75d |
| 190 |  | [TAG] Skybox (sólo la incorporación en el motor) | 0.63d | 2018-03-28 09:00 | 2018-03-28 16:02 |  | 45.37d |
| 191 |  | [TAG] Otras | 4d | 2018-03-28 09:00 | 2018-04-02 19:00 |  | 42d |
| 192 |  | [V2] Multiplataforma con soporte para Windows | 5d | 2018-03-28 09:00 | 2018-04-03 19:00 |  | 41d |
| 193 |  | [V2] Implementación de nubes | 1.88d | 2018-03-28 09:00 | 2018-03-29 18:02 |  | 44.12d |
| 194 |  | [V2] Implementación de sistemas de partículas | 1.88d | 2018-03-28 09:00 | 2018-03-29 18:02 |  | 44.12d |
| 195 |  | [TDS] Integración de sonido y música en el juego | 3.75d | 2018-03-28 09:00 | 2018-04-02 17:00 |  | 42.25d |
| 196 |  | [TDS] Post producción (mezcla y masterización in-game) | 3.75d | 2018-03-28 09:00 | 2018-04-02 17:00 |  | 42.25d |
| 197 |  | [PD] Making of juego/proyecto | 11.25d | 2018-03-28 09:00 | 2018-04-12 11:00 |  | 34.75d |
| 198 |  | [PD] Créditos | 3.75d | 2018-03-28 09:00 | 2018-04-02 17:00 |  | 42.25d |
| 199 |  | [RV] Rigging de los personajes | 1d | 2018-03-28 09:00 | 2018-03-28 19:00 |  | 45d |
| 200 |  | [RV] Captura de movimiento | 5d | 2018-03-28 09:00 | 2018-04-03 19:00 |  | 41d |
| 201 |  | [RV] Animación de los personajes | 10d | 2018-03-28 09:00 | 2018-04-10 19:00 |  | 36d |
| 202 |  | [RV] Texturizado del entorno y elementos | 6.5d | 2018-03-28 09:00 | 2018-04-05 13:00 |  | 39.5d |

## Version 2 (saved 2017-11-12)

Note of the change: Cue sheet

Last finish stays 2018-05-30. Complete tasks 18 → 20.

Added:

| ID | Task | Duration | Start | Finish | Predecessors | Constraint | Resources |
| --- | --- | --- | --- | --- | --- | --- | --- |
| 11 | **[TDS] Rellenar la Cue Sheet [1/6]** | 0.88d | 2017-10-04 09:00 A | 2017-10-04 18:02 A |  |  | Luis [25%]; Pablo [25%]; Adrián [25%] |
| 31 | **[V2] Diseñar e implementar de la arquitectura basada en componentes (diagrama de clases e implementación) [1/4]** | 0.5d | 2017-11-03 09:00 | 2017-11-03 13:00 |  |  |  |
| 36 | **[V1] Hacer el sistema de toma de decisión con Lógica Difusa [1/3]** | 3d | 2017-11-07 09:00 | 2017-11-09 19:00 |  |  |  |
| 38 | **[V1] Hacer el sistema de Waypoints para pathfinding continuo [1/3]** | 3d | 2017-11-07 09:00 | 2017-11-09 19:00 |  |  |  |
| 45 | **[PD] Vídeo con animación del logo de la empresa [2/4]** | 2d | 2017-11-13 09:00 | 2017-11-14 19:00 | 22 |  | Alexei [21%]; Laura [21%]; Luis [21%] |
| 53 | [PM] Reuniones de seguimiento diarias de 15 min | 10d | 2017-11-16 09:00 | 2017-11-29 19:00 | 27 | finish no earlier than 2017-11-29 19:00 |  |
| 55 | [V2] [RETRASO] Realización del sistema de control del player por motor de físicas 2D, dynamic o kinematic | 2d | 2017-11-08 09:00 | 2017-11-09 19:00 | 28, 29, 35 | finish no earlier than 2017-11-09 19:00 | Laura [52%]; Luis [52%] |
| 56 | **[V2] Diseñar e implementar de la arquitectura basada en componentes (diagrama de clases e implementación) [2/4]** | 2d | 2017-11-16 09:00 | 2017-11-17 19:00 |  |  |  |
| 57 | [V2] Diseñar e implementar la arquitectura de componentes final [1/3] | 2d | 2017-11-16 09:00 | 2017-11-17 19:00 |  |  |  |
| 59 | [TDS] Rellenar Cue Sheet [3/6] | 1.63d | 2017-12-14 11:57 | 2017-12-15 19:00 |  | finish no earlier than 2017-12-15 19:00 |  |
| 60 | [TDS] Rellenar Hoja de metadatos [2/4] | 1.88d | 2017-12-14 09:57 | 2017-12-15 19:00 |  | finish no earlier than 2017-12-15 19:00 |  |
| 61 | **[TDS] Grabaciones propias[1/2]** | 1d | 2017-12-21 09:00 | 2017-12-21 19:00 |  |  |  |
| 62 | [TDS] Grabar voces personajes [2/4] | 1d | 2017-12-21 09:00 | 2017-12-21 19:00 |  | finish no earlier than 2017-12-21 19:00 |  |
| 63 | **[TDS] Hacer sonidos externos [1/2]** | 1d | 2017-12-18 11:00 | 2017-12-19 11:00 |  |  |  |
| 64 | [TDS] Hacer biblioteca sonidos externos | 1d | 2017-12-21 09:00 | 2017-12-21 19:00 |  | finish no earlier than 2017-12-21 19:00 |  |
| 65 | **[TDS] Integración del motor de audio en el juego con prueba de concepto[1/2]** | 0.38d | 2017-12-19 15:57 | 2017-12-19 19:00 |  |  |  |
| 66 | [TDS] Hacer prototipo de fachada de audio | 0.38d | 2017-12-19 15:57 | 2017-12-19 19:00 |  | finish no earlier than 2017-12-19 19:00 |  |
| 67 | [V1] Sistema de gestión de eventos (Trigger System/Event Manager) [1/2] | 2d | 2017-12-07 09:00 | 2017-12-08 19:00 |  | finish no earlier than 2017-12-08 19:00 |  |
| 68 | [V1] Sistema de percepción sensorial (vista, oído, olfato, canales…)[1/2] | 6.25d | 2017-11-30 17:00 | 2017-12-08 19:00 |  | finish no earlier than 2017-12-08 19:00 |  |
| 69 | **[V1] Hacer el sistema de toma de decisión con Lógica Difusa** | 6.25d | 2017-11-16 17:00 | 2017-11-24 19:00 | 37 |  |  |
| 70 | [V1] Hacer prototipo inicial del sistema de toma de decisión con lógica difusa | 6.25d | 2017-11-16 17:00 | 2017-11-24 19:00 | 37 | finish no earlier than 2017-11-24 19:00 |  |
| 71 | **[V1] Hacer el sistema de Waypoints para pathfinding continuo [2/3]** | 7.5d | 2017-11-24 15:00 | 2017-12-05 19:00 | 39 |  |  |
| 73 | **[PD] Vídeo con animación del logo de la empresa [2/4]** | 0.75d | 2017-11-16 09:00 | 2017-11-16 17:00 | 22 |  | Alexei [25%]; Laura [25%]; Luis [25%] |
| 74 | [PD] Hacer storyboard de la animación | 0.75w | 2017-11-09 11:00 | 2017-11-14 19:00 | 22 | finish no earlier than 2017-11-14 19:00 | Alexei [25%]; Laura [25%]; Luis [25%] |
| 77 | [PM] Realizar informe iteración 3 | 0.75d | 2017-11-30 09:00 | 2017-11-30 17:00 | 58, 52 | start no earlier than 2017-11-29 09:00 | Laura [25%]; Luis [25%]; Pablo [25%] |
| 80 | [PM] Registrar tiempos y % de realización de tareas en Project (4/5) | 10d | 2017-11-30 09:00 | 2017-12-13 19:00 | 52 | finish no earlier than 2017-11-29 19:00 |  |
| 83 | [PM] Aplicar el modelo EVA en Project | 2.25d | 2017-12-14 17:00 | 2017-12-18 19:00 |  | finish no earlier than 2017-12-18 19:00 |  |
| 86 | [V1] Hacer el sistema de toma de decisión con Lógica Difusa [3/3] | 6.25d | 2017-11-16 17:00 | 2017-11-24 19:00 | 37 | finish no earlier than 2017-11-24 19:00 |  |
| 87 | [V1] Hacer el sistema de Waypoints para pathfinding continuo [3/3] | 7.5d | 2017-11-24 15:00 | 2017-12-05 19:00 | 39 | finish no earlier than 2017-12-05 19:00 |  |

Removed: 53 [V1] Sistema de toma de decisión con Lógica Difusa

Changed:

| ID | Task | Start | Finish | Duration | Complete | Total float | Predecessors | Other |
| --- | --- | --- | --- | --- | --- | --- | --- | --- |
| 1 | **Hito 0** |  |  |  |  |  |  | constraint finish no later than 2017-10-18 19:00 → none |
| 13 | **Hito 1** |  |  |  | 11% → 12% |  |  |  |
| 26 | **Iteración 2** |  |  |  | 0% → 39% |  |  |  |
| 27 | [PM] Registrar tiempos y % de realización de tareas en Project (2/5) | 2017-11-01 15:00 A | 2017-11-14 19:00 A |  | 0% → 100% | 7.3d → none |  |  |
| 35 | [V2] Instalación irrLicht | 2017-11-06 09:00 A | 2017-11-06 13:00 A |  | 0% → 100% | 10.8d → none |  |  |
| 41 | [TDS] Añadir sonidos externos [1/4] |  |  |  |  |  |  | was named [TDS] Añadir sonidos externos a la biblioteca de sonido(1/4) |
| 42 | [TDS] Rellenar hoja de metadatos [1/4] |  |  |  |  |  |  | was named [TDS] Actualizar hoja de metadatos (1/4) |
| 43 | [TDS] Rellenar la Cue Sheet [2/6] |  |  |  |  |  |  | was named [TDS] Añadir elementos sonoros a la Cue Sheet (2/5) |
| 44 | [V2] Realización del sistema de control del player por motor de físicas 2D, dynamic o kinematic | 2017-11-07 09:00 A |  |  | 0% → 25% | 10.3d → -1.5d |  |  |
| 52 | [PM] Registrar tiempos y % de realización de tareas en Project (3/5) |  | 2017-11-16 12:36 → 2017-11-29 19:00 (+13d) | 0.45d → 10d |  | 20.35d → 120d |  | constraint none → start no earlier than 2017-11-16 09:00 |
| 54 | [PM] Aplicar el modelo EVA en Project | 2017-12-14 09:00 → 2017-12-14 17:00 | 2017-12-18 11:00 → 2017-12-18 19:00 |  |  | 19.75d → 117d |  | constraint none → finish no earlier than 2017-12-18 19:00 |
| 72 | [V1] Sistema de Waypoints para pathfinding continuo | 2017-11-24 11:00 → 2017-11-24 15:00 | 2017-12-05 17:00 → 2017-12-05 19:00 |  |  | 7.05d → 6.8d | [V1] Sistema de toma de decisión con Lógica Difusa → 39 | constraint none → finish no earlier than 2017-12-05 19:00 |
| 75 | [PM] Detallar plan iteraciones del mes de Diciembre. Creación Subtareas y precedencias en Project (1/2) | 2017-11-16 09:00 → 2017-11-28 09:00 (+12d) | 2017-11-17 10:36 → 2017-11-28 15:48 (+11d) | 1.2d → 0.6d |  | 18.4d → 130.8d |  | constraint none → start no earlier than 2017-11-28 09:00; resources none → Alexei [60%]; Adrián [60%] |
| 76 | [PM] Detallar plan iteraciones del mes de Diciembre. Asignar recursos a las tareas en Project (1/2) | 2017-11-17 10:36 → 2017-11-28 15:48 (+11d) | 2017-11-20 12:12 → 2017-11-29 10:36 (+9d) | 1.2d → 0.6d |  | 18.4d → 130.8d |  | constraint none → finish no earlier than 2017-11-20 19:00; resources none → Alexei [60%]; Adrián [60%] |
| 78 | Objetivo iteración 3 | 2017-12-05 17:00 → 2017-12-05 19:00 | 2017-12-05 17:00 → 2017-12-05 19:00 |  |  | 7.05d → 126d | 75, 76, 52, [V1] Sistema de toma de decisión con Lógica Difusa, 72, 90, 89, 58 → 77 | constraint none → finish no earlier than 2017-12-05 19:00 |
| 82 | [PM] Detallar plan iteraciones del mes de Diciembre. Asignar recursos a las tareas en Project (2/2) |  |  |  |  |  | 75 → none |  |
| 84 | [V1] Sistema de gestión de eventos (Trigger System/Event Manager)[2/2] |  |  |  |  |  |  | was named [V1] Sistema de gestión de eventos (Trigger System/Event Manager) |
| 85 | [V1] Sistema de percepción sensorial (vista, oído, olfato, canales…)[2/2] |  |  |  |  |  |  | was named [V1] Sistema de percepción sensorial (vista, oído, olfato, canales…) |
| 89 | [V2] Formato propio para la definición de los niveles (documento con la especificación del formato) (2/2) | 2017-11-16 09:00 → 2017-11-16 17:00 | 2017-11-17 11:00 → 2017-11-17 19:00 |  |  | 19.55d → 138d |  | constraint none → finish no earlier than 2017-11-17 19:00 |
| 90 | [V2] Mecánicas de acción | 2017-11-16 09:00 → 2017-11-16 09:57 | 2017-11-17 18:02 → 2017-11-17 19:00 |  |  | 18.92d → 138d |  | constraint none → finish no earlier than 2017-11-17 19:00 |
| 109 | [TDS] Grabaciones propias[2/2] |  |  |  |  |  |  | was named [TDS] Grabaciones propias |
| 110 | [TDS] Sonidos externos[2/2] |  |  |  |  |  |  | was named [TDS] Sonidos externos |
| 114 | [TDS] Integración del motor de audio en el juego con prueba de concepto[2/2] |  |  |  |  |  |  | was named [TDS] Integración del motor de audio en el juego con prueba de concepto |
| 116 | Objetivo iteración 5 |  |  |  |  |  | 95, 96, 54, 97, 98, 99, 105, 106, 107, 108, 109, 110, 111, 112, 113, 114, 115 → 95, 96, 97, 98, 99, 105, 106, 107, 108, 109, 110, 111, 112, 113, 114, 115, 63 |  |

## Version 3 (saved 2017-11-15)

Note of the change: Iteration 3 resources and precedencies added

Last finish stays 2018-05-30. Complete tasks 20 → 39.

Added:

| ID | Task | Duration | Start | Finish | Constraint | Resources |
| --- | --- | --- | --- | --- | --- | --- |
| 22 | **[PD] Vídeo con animación del logo de la empresa [1/5]** | 0.75d | 2017-10-27 09:00 A | 2017-10-27 17:00 A |  | Alexei [25%]; Laura [25%]; Luis [25%] |
| 37 | [TAG] Instalar librería matemática (glm/glmatriz) | 0.5d | 2017-11-09 09:00 A | 2017-11-09 13:00 A | start no earlier than 2017-11-09 09:00 | Adrián [8%]; Alexei [8%]; Laura [8%]; Luis [8%]; Pablo [8%] |
| 38 | [TAG] Instalar librería de lectura de mallas (assimp…) | 1.25d | 2017-11-09 09:00 A | 2017-11-10 11:00 A | start no earlier than 2017-11-09 09:00 | Adrián [13%]; Alexei [13%]; Laura [13%]; Luis [13%]; Pablo [13%] |
| 39 | [TAG] Instalar librería de entrada/salida (SFML…) | 1.25d | 2017-11-10 09:00 A | 2017-11-13 11:00 A | start no earlier than 2017-11-10 09:00 | Adrián [13%]; Alexei [13%]; Laura [13%]; Luis [13%]; Pablo [13%] |
| 59 | [V2] Decidir y aprender sobre el motor de físicas a utilizar | 1d | 2017-11-16 09:00 | 2017-11-16 19:00 | start no earlier than 2017-11-16 09:00 | Luis [96%]; Laura [29%] |
| 71 | [TDS] Instalar FMOD STUDIO y FMOD STUDIO API | 1d | 2017-11-17 09:00 | 2017-11-17 19:00 | start no earlier than 2017-11-17 09:00 | Adrián [12%]; Luis [12%]; Pablo [12%] |

Changed:

| ID | Task | Start | Finish | Duration | Complete | Total float | Predecessors | Other |
| --- | --- | --- | --- | --- | --- | --- | --- | --- |
| 13 | **Hito 1** |  |  |  | 12% → 21% |  |  |  |
| 27 | **Iteración 2** |  |  |  | 39% → 93% |  |  |  |
| 29 | [V1] Iniciar el documento de diseño de mecánicas de los NPCs | 2017-11-02 09:00 A | 2017-11-02 13:00 A |  | 0% → 100% | 3.25d → none |  |  |
| 30 | [V1] Iniciar el documento de diseño de toma de decisión: espacio y métodos | 2017-11-02 09:00 A | 2017-11-02 18:31 A |  | 0% → 100% | 1.31d → none |  |  |
| 31 | [V1] Iniciar el documento de diseño técnico del motor de IA | 2017-11-03 09:28 A | 2017-11-03 19:00 A |  | 0% → 100% | 0.25d → none |  |  |
| 32 | **[V2] Diseñar e implementar de la arquitectura basada en componentes (diagrama de clases e implementación) [1/4]** | 2017-11-03 09:00 A | 2017-11-03 13:00 A |  | 0% → 100% | 3d → none |  |  |
| 33 | [V2] Diseño inicial de la arquitectura basada en componentes | 2017-11-03 09:00 A | 2017-11-03 13:00 A |  | 0% → 100% | 3d → none |  |  |
| 34 | [RV] Bocetar los personajes | 2017-11-03 09:00 A | 2017-11-03 11:00 A |  | 0% → 100% | 148.75d → none |  |  |
| 35 | [V2] Definición inicial del formato para la definición de niveles (1/2) | 2017-11-06 09:00 A | 2017-11-06 11:00 A |  | 0% → 100% | 2.25d → none |  |  |
| 40 | **[V1] Hacer el sistema de toma de decisión con Lógica Difusa [1/3]** | 2017-11-07 09:00 A | 2017-11-09 19:00 A |  | 0% → 100% | -0.75d → none |  |  |
| 41 | [V1] Aprender y plantear inicialmente el sistema de Lógica Difusa | 2017-11-07 09:00 A | 2017-11-09 19:00 A |  | 0% → 100% | -0.75d → none |  |  |
| 42 | **[V1] Hacer el sistema de Waypoints para pathfinding continuo [1/3]** | 2017-11-07 09:00 A | 2017-11-09 19:00 A |  | 0% → 100% | -0.75d → none |  |  |
| 43 | [V1] Aprender y plantear inicialmente el sistema de Waypoints | 2017-11-07 09:00 A | 2017-11-09 19:00 A |  | 0% → 100% | -0.75d → none |  |  |
| 44 | [PM] Rellenar documento Gestión de riesgos | 2017-11-08 09:00 A | 2017-11-08 13:00 A |  | 0% → 100% | 0d → none |  |  |
| 45 | [TDS] Añadir sonidos externos [1/4] | 2017-11-10 09:00 A | 2017-11-10 12:12 A |  | 0% → 100% | 143.48d → none |  |  |
| 46 | [TDS] Rellenar hoja de metadatos [1/4] | 2017-11-10 12:12 A | 2017-11-10 15:09 A |  | 0% → 100% | 143.48d → none |  |  |
| 47 | [TDS] Rellenar la Cue Sheet [2/6] | 2017-11-10 09:00 A | 2017-11-10 11:00 A |  | 0% → 100% | 143.75d → none |  |  |
| 49 | **[PD] Vídeo con animación del logo de la empresa [2/5]** | 2017-11-13 09:00 A | 2017-11-14 19:00 A |  | 0% → 100% | -4.5d → none |  | was named [PD] Vídeo con animación del logo de la empresa [2/4] |
| 50 | [PD] Diseño final del logo de la empresa | 2017-11-13 09:00 A | 2017-11-14 19:00 A |  | 0% → 100% | -4.5d → none |  |  |
| 51 | [PM] Detallar plan iteraciones del mes de Noviembre. Creación Subtareas y precedencias en Project (2/2) | 2017-11-14 09:00 A | 2017-11-14 13:00 A |  | 0% → 100% | -4.5d → none |  |  |
| 52 | [PM] Detallar plan iteraciones del mes de Noviembre. Asignar recursos a las tareas en Project (2/2) | 2017-11-14 15:00 A | 2017-11-14 19:00 A |  | 0% → 100% | -4.5d → none |  |  |
| 53 | [PM] Realizar informe iteración 2 | 2017-11-15 09:00 A | 2017-11-15 17:00 A |  | 0% → 100% | -4.5d → none |  |  |
| 56 | [PM] Registrar tiempos y % de realización de tareas en Project (3/5) |  |  |  |  |  | 28 → none | resources none → Adrián [1%]; Alexei [1%]; Laura [1%]; Luis [1%]; Pablo [1%] |
| 57 | [PM] Reuniones de seguimiento diarias de 15 min |  |  |  |  |  | 28 → none | constraint finish no earlier than 2017-11-29 19:00 → start no earlier than 2017-11-16 09:00; resources none → Adrián [3%]; Alexei [3%]; Laura [3%]; Luis [3%]; Pablo [3%] |
| 58 | [PM] Aplicar el modelo EVA en Project | 2017-12-14 17:00 → 2017-11-27 09:00 (-17d) | 2017-12-18 19:00 → 2017-11-27 19:00 (-21d) | 2.25d → 1d |  | 117d → 132d |  | constraint finish no earlier than 2017-12-18 19:00 → start no earlier than 2017-11-27 09:00; resources none → Adrián [56%]; Alexei [56%] |
| 60 | [V2] [RETRASO] Realizar el sistema de control del player por motor de físicas 2D, dynamic o kinematic | 2017-11-08 09:00 → 2017-11-27 09:00 (+19d) | 2017-11-09 19:00 → 2017-11-28 19:00 (+19d) |  |  | 144d → 130.5d | 29, 30, 36 → 48, 59 | was named [V2] [RETRASO] Realización del sistema de control del player por motor de físicas 2D, dynamic o kinematic; constraint finish no earlier than 2017-11-09 19:00 → start no earlier than 2017-11-27 09:00; resources Laura [52%]; Luis [52%] → Laura [58%]; Luis [58%] |
| 61 | **[V2] Diseñar e implementar de la arquitectura basada en componentes (diagrama de clases e implementación) [2/4]** | 2017-11-16 09:00 → 2017-11-20 09:00 (+4d) | 2017-11-17 19:00 → 2017-11-24 19:00 (+7d) | 2d → 5d |  |  |  |  |
| 62 | [V2] Diseñar e implementar la arquitectura de componentes final [1/3] | 2017-11-16 09:00 → 2017-11-20 09:00 (+4d) | 2017-11-17 19:00 → 2017-11-24 19:00 (+7d) | 2d → 5d |  | 18.8d → 133d | none → 33, 59 | constraint none → start no earlier than 2017-11-20 09:00; resources none → Luis [63%]; Laura [63%] |
| 63 | [RV] Bocetos de los elementos |  | 2017-11-16 19:00 → 2017-11-17 19:00 (+1d) | 1d → 2d |  | 19.8d → 137.25d |  | constraint none → start no earlier than 2017-11-16 09:00; resources none → Laura [50%] |
| 64 | [TDS] Rellenar Cue Sheet [3/6] | 2017-12-14 11:57 → 2017-11-29 09:00 (-15d) | 2017-12-15 19:00 → 2017-11-29 13:00 (-16d) | 1.63d → 0.5d |  | 118d → 130d |  | constraint finish no earlier than 2017-12-15 19:00 → start no earlier than 2017-11-29 09:00; resources none → Adrián [8%]; Luis [8%]; Pablo [8%] |
| 65 | [TDS] Rellenar Hoja de metadatos [2/4] | 2017-12-14 09:57 → 2017-11-29 09:00 (-15d) | 2017-12-15 19:00 → 2017-11-29 13:00 (-16d) | 1.88d → 0.5d |  | 118d → 130d |  | constraint finish no earlier than 2017-12-15 19:00 → start no earlier than 2017-11-29 09:00; resources none → Adrián [21%]; Luis [21%]; Pablo [21%] |
| 66 | **[TDS] Grabaciones propias[1/2]** | 2017-12-21 09:00 → 2017-11-27 09:00 (-24d) | 2017-12-21 19:00 → 2017-11-28 19:00 (-23d) | 1d → 2d |  | -5.2d → none |  |  |
| 67 | [TDS] Grabar voces personajes [2/4] | 2017-12-21 09:00 → 2017-11-27 09:00 (-24d) | 2017-12-21 19:00 → 2017-11-28 19:00 (-23d) | 1d → 2d |  | -5.2d → 131d | none → 34 | constraint finish no earlier than 2017-12-21 19:00 → start no earlier than 2017-11-27 09:00; resources none → Adrián [31%]; Luis [31%]; Pablo [31%] |
| 68 | **[TDS] Obtener sonidos externos [1/2]** | 2017-12-18 11:00 → 2017-11-21 09:00 (-27d) | 2017-12-19 11:00 → 2017-11-21 19:00 (-28d) |  |  |  |  | was named [TDS] Hacer sonidos externos [1/2] |
| 69 | [TDS] Obtener biblioteca sonidos externos | 2017-12-21 09:00 → 2017-11-21 09:00 (-30d) | 2017-12-21 19:00 → 2017-11-21 19:00 (-30d) |  |  | 114d → 136d |  | was named [TDS] Hacer biblioteca sonidos externos; constraint finish no earlier than 2017-12-21 19:00 → start no earlier than 2017-11-21 09:00; resources none → Adrián [40%]; Pablo [84%] |
| 70 | **[TDS] Integración del motor de audio en el juego con prueba de concepto[1/2]** | 2017-12-19 15:57 → 2017-11-17 09:00 (-32d) | 2017-12-19 19:00 → 2017-11-17 19:00 (-32d) | 0.38d → 1d |  | -3.2d → none |  |  |
| 72 | [TDS] Hacer prototipo de fachada de audio | 2017-12-19 15:57 → 2017-11-20 09:00 (-29d) | 2017-12-19 19:00 → 2017-11-21 19:00 (-28d) | 0.38d → 2d |  | -3.2d → 136d | none → 71 | constraint finish no earlier than 2017-12-19 19:00 → start no earlier than 2017-11-20 09:00; resources none → Adrián [56%] |
| 73 | [V1] Sistema de gestión de eventos (Trigger System/Event Manager) [1/2] | 2017-12-07 09:00 → 2017-11-20 09:00 (-17d) | 2017-12-08 19:00 → 2017-11-24 19:00 (-14d) | 2d → 5d |  | 123d → 132.5d | none → 32 | constraint finish no earlier than 2017-12-08 19:00 → start no earlier than 2017-11-20 09:00; resources none → Luis [31%]; Laura [31%] |
| 74 | [V1] Sistema de percepción sensorial (vista, oído, olfato, canales…)[1/2] | 2017-11-30 17:00 → 2017-11-22 09:00 (-8d) | 2017-12-08 19:00 → 2017-11-24 19:00 (-14d) | 6.25d → 3d |  | 123d → 132.5d | none → 29, 30, 31 | constraint finish no earlier than 2017-12-08 19:00 → start no earlier than 2017-11-22 09:00; resources none → Adrián [34%]; Alexei [34%]; Pablo [34%] |
| 75 | **[V1] Hacer el sistema de toma de decisión con Lógica Difusa [2/3]** | 2017-11-16 17:00 → 2017-11-22 09:00 (+6d) |  | 6.25d → 3d |  | 13.8d → none | 41 → none | was named [V1] Hacer el sistema de toma de decisión con Lógica Difusa |
| 76 | [V1] Hacer prototipo inicial del sistema de toma de decisión con lógica difusa | 2017-11-16 17:00 → 2017-11-22 09:00 (+6d) |  | 6.25d → 3d |  | 13.8d → 133d | 41 → 41, 29, 30, 31 | resources none → Adrián [27%]; Alexei [27%]; Pablo [27%] |
| 77 | **[V1] Hacer el sistema de Waypoints para pathfinding continuo [2/3]** | 2017-11-24 15:00 → 2017-11-22 09:00 (-2d) | 2017-12-05 19:00 → 2017-11-24 19:00 (-11d) | 7.5d → 3d |  | 6.8d → none | 43 → none |  |
| 78 | [V1] Sistema de Waypoints para pathfinding continuo | 2017-11-24 15:00 → 2017-11-22 09:00 (-2d) | 2017-12-05 19:00 → 2017-11-24 19:00 (-11d) | 7.5d → 3d |  | 6.8d → 133d | 43 → 43, 29, 30, 31 | constraint finish no earlier than 2017-12-05 19:00 → start no earlier than 2017-11-22 09:00; resources none → Adrián [34%]; Alexei [34%]; Pablo [34%] |
| 79 | **[PD] Vídeo con animación del logo de la empresa [3/5]** | 2017-11-16 09:00 → 2017-11-17 09:00 (+1d) | 2017-11-16 17:00 → 2017-11-17 19:00 (+1d) | 0.75d → 1d |  |  | 23 → 49 | was named [PD] Vídeo con animación del logo de la empresa [2/4]; resources Alexei [25%]; Laura [25%]; Luis [25%] → none |
| 80 | [PD] Hacer storyboard de la animación | 2017-11-09 11:00 → 2017-11-17 09:00 (+8d) | 2017-11-14 19:00 → 2017-11-17 19:00 (+3d) | 0.75w → 1d |  | 141d → 138d | 23 → 50 | constraint finish no earlier than 2017-11-14 19:00 → start no earlier than 2017-11-17 09:00 |
| 81 | [PM] Detallar plan iteraciones del mes de Diciembre. Creación Subtareas y precedencias en Project (1/2) |  | 2017-11-28 15:48 → 2017-11-28 13:00 | 0.6d → 0.5d |  | 130.8d → 130.5d | 24 → none |  |
| 82 | [PM] Detallar plan iteraciones del mes de Diciembre. Asignar recursos a las tareas en Project (1/2) | 2017-11-28 15:48 → 2017-11-28 15:00 | 2017-11-29 10:36 → 2017-11-28 19:00 (-1d) | 0.6d → 0.5d |  | 130.8d → 130.5d |  |  |
| 83 | [PM] Realizar informe iteración 3 | 2017-11-30 09:00 → 2017-11-29 15:00 (-1d) | 2017-11-30 17:00 → 2017-11-29 19:00 (-1d) | 0.75d → 0.5d |  | 129.25d → 130d | 63, 56 → 58, 60, 61, 63, 64, 65, 66, 68, 70, 73, 74, 75, 77, 79, 82 |  |
| 84 | Objetivo iteración 3 | 2017-12-05 19:00 → 2017-11-29 19:00 (-6d) | 2017-12-05 19:00 → 2017-11-29 19:00 (-6d) |  |  | 126d → 130d |  | constraint finish no earlier than 2017-12-05 19:00 → start no earlier than 2017-11-29 09:00 |

## Version 4 (data date 2017-11-15, saved 2017-11-15)

Note of the change: Bonus: Se me olvidó guardar el project - actualizado.

Last finish stays 2018-05-30. Complete tasks 39 → 48.

Added:

| ID | Task | Duration | Start | Finish | Resources |
| --- | --- | --- | --- | --- | --- |
| 37 | Instalar Manjaro | 1d | 2017-11-02 09:00 A | 2017-11-02 19:00 A | Adrián [12%]; Alexei [12%]; Laura [12%]; Luis [12%]; Pablo [12%] |

Changed:

| ID | Task | Start | Finish | Duration | Complete | Total float | Predecessors | Other |
| --- | --- | --- | --- | --- | --- | --- | --- | --- |
| 13 | **Hito 1** |  |  |  | 21% → 25% |  |  |  |
| 14 | **Iteración 1** |  | 2017-11-01 17:00 A |  | 98% → 100% | 0d → none |  |  |
| 21 | [TDS] Añadir elementos sonoros a la Cue Sheet (1/5) | 2017-10-26 09:00 A | 2017-10-26 11:00 A |  | 0% → 100% | 4.25d → none |  |  |
| 26 | Objetivo Iteración 1 | 2017-11-01 17:00 A | 2017-11-01 17:00 A |  | 0% → 100% | -0.25d → none |  |  |
| 27 | **Iteración 2** |  |  |  | 93% → 99% |  |  |  |
| 49 | [V2] Realización del sistema de control del player por motor de físicas 2D, dynamic o kinematic |  | 2017-11-09 19:00 A |  | 25% → 100% | 141.5d → none |  |  |
| 59 | [V2] Decidir y aprender sobre el motor de físicas a utilizar |  |  |  |  | 139d → -23.45d |  | constraint start no earlier than 2017-11-16 09:00 → none |
| 60 | [RV] Bocetos de los elementos |  |  |  |  | 137.25d → 138d |  | constraint start no earlier than 2017-11-16 09:00 → finish no earlier than 2017-11-17 19:00 |
| 61 | [V1] Sistema de percepción sensorial (vista, oído, olfato, canales…)[1/2] | 2017-11-22 09:00 → 2017-11-16 09:00 (-6d) | 2017-11-24 19:00 → 2017-11-20 19:00 (-4d) |  |  | 132.5d → 137d |  | constraint start no earlier than 2017-11-22 09:00 → finish no earlier than 2017-11-20 19:00 |
| 62 | **[TDS] Integración del motor de audio en el juego con prueba de concepto[1/2]** |  | 2017-11-17 19:00 → 2017-11-21 19:00 (+4d) | 1d → 3d |  | none → -21.45d |  |  |
| 64 | [TDS] Hacer prototipo de fachada de audio |  |  |  |  | 136d → -21.45d |  | constraint start no earlier than 2017-11-20 09:00 → finish no earlier than 2017-11-21 19:00 |
| 68 | [V2] Diseñar e implementar la arquitectura de componentes final [1/3] |  |  |  |  | 133d → -24.45d |  | constraint start no earlier than 2017-11-20 09:00 → finish no earlier than 2017-11-24 19:00 |
| 69 | [V1] Sistema de gestión de eventos (Trigger System/Event Manager) [1/2] |  |  |  |  | 132.5d → 133d |  | constraint start no earlier than 2017-11-20 09:00 → finish no earlier than 2017-11-24 19:00 |
| 75 | [V1] Sistema de Waypoints para pathfinding continuo |  |  |  |  | 133d → -24.45d |  | constraint start no earlier than 2017-11-22 09:00 → finish no earlier than 2017-11-24 19:00 |
| 84 | [PM] Realizar informe iteración 3 | 2017-11-29 15:00 → 2017-11-29 09:00 | 2017-11-29 19:00 → 2017-11-29 13:00 |  |  | 130d → 130.5d | 76, 77, 67, 60, 82, 83, 78, 70, 62, 69, 61, 72, 74, 65, 81 → 76, 77, 78, 81 |  |
| 85 | Objetivo iteración 3 | 2017-11-29 19:00 → 2017-11-29 13:00 | 2017-11-29 19:00 → 2017-11-29 13:00 |  |  | 130d → 130.5d |  |  |
| 101 | **Iteración 5** |  |  |  | 0% → 9% |  |  |  |
| 107 | [V1] Acabar el documento de diseño de mecánicas de los NPCs | 2017-11-02 09:00 A | 2017-11-02 13:00 A |  | 0% → 100% | 149.5d → none |  |  |
| 108 | [V1] Acabar el documento de diseño de toma de decisión: espacio y métodos | 2017-11-02 09:00 A | 2017-11-02 18:31 A |  | 0% → 100% | 149.06d → none |  |  |
| 109 | [V1] Acabar el documento de diseño técnico del motor de IA | 2017-11-03 09:00 A | 2017-11-03 18:31 A |  | 0% → 100% | 148.06d → none |  |  |
| 110 | [V1] Diseño de requerimientos y funciones de red | 2017-11-02 17:00 A | 2017-11-03 19:00 A |  | 0% → 100% | 148d → none |  |  |
| 111 | [V1] Diseño técnico del motor de red | 2017-11-02 09:57 A | 2017-11-03 19:00 A |  | 0% → 100% | 148d → none |  |  |
| 123 | Objetivo iteración 5 |  |  |  |  |  | 102, 103, 104, 105, 106, 112, 113, 114, 115, 116, 117, 118, 119, 120, 121, 122, 70 → 102, 103, 104, 105, 106, 112, 113, 114, 115, 116, 117, 118, 119, 120, 121, 122 |  |

## Version 5 (data date 2017-11-15, saved 2017-11-21)

Note of the change: Merge branch 'components' of https://github.com/ABPMultimediaUA/Wasted-Racing into IAtest

Last finish stays 2018-05-30.

Removed: 74 [V1] Hacer el sistema de Waypoints para pathfinding continuo [2/3]

Changed:

| ID | Task | Total float | Other |
| --- | --- | --- | --- |
| 22 | **[PD] Crear vídeo con animación del logo de la empresa [1/5]** |  | was named [PD] Vídeo con animación del logo de la empresa [1/5] |
| 49 | [V2] Realizar del sistema de control del player por motor de físicas 2D, dynamic o kinematic |  | was named [V2] Realización del sistema de control del player por motor de físicas 2D, dynamic o kinematic |
| 50 | **[PD] Crear vídeo con animación del logo de la empresa [2/5]** |  | was named [PD] Vídeo con animación del logo de la empresa [2/5] |
| 51 | [PD] Hacer diseño final del logo de la empresa |  | was named [PD] Diseño final del logo de la empresa |
| 58 | [PM] Hacer reuniones de seguimiento diarias de 15 min |  | was named [PM] Reuniones de seguimiento diarias de 15 min |
| 60 | [RV] Bocetar los elementos |  | was named [RV] Bocetos de los elementos |
| 61 | [V1] Hacer sistema de percepción sensorial (vista, oído, olfato, canales…)[1/2] |  | was named [V1] Sistema de percepción sensorial (vista, oído, olfato, canales…)[1/2] |
| 62 | **[TDS] Integrar del motor de audio en el juego con prueba de concepto[1/2]** |  | was named [TDS] Integración del motor de audio en el juego con prueba de concepto[1/2] |
| 65 | **[PD] Crear vídeo con animación del logo de la empresa [3/5]** |  | was named [PD] Vídeo con animación del logo de la empresa [3/5] |
| 69 | [V1] Hacer sistema de gestión de eventos (Trigger System/Event Manager) [1/2] |  | was named [V1] Sistema de gestión de eventos (Trigger System/Event Manager) [1/2] |
| 74 | [V1] Hacer el sistema de Waypoints para pathfinding continuo [2/3] | -24.45d → 133d | was named [V1] Sistema de Waypoints para pathfinding continuo |
| 77 | **[TDS] Hacer grabaciones propias [1/2]** |  | was named [TDS] Grabaciones propias[1/2] |

## Version 6 (data date 2017-11-15, saved 2017-11-29)

Note of the change: Merge branch 'master' of https://github.com/ABPMultimediaUA/Wasted-Racing

Last finish stays 2018-05-30. Complete tasks 48 → 64.

Added:

| ID | Task | Duration | Start | Finish | Predecessors | Constraint | Resources |
| --- | --- | --- | --- | --- | --- | --- | --- |
| 59 | **[V2] Utilizar propiedades físicas en las mecánicas jugables** | 1d | 2017-11-16 09:00 A | 2017-11-16 19:00 A |  |  | Luis [96%]; Laura [29%] |
| 61 | [V2] [NUEVA] Crear motor de físicas própio | 0d | 2017-11-16 09:00 A | 2017-11-16 09:00 A |  |  | Luis [96%]; Laura [29%] |
| 69 | [PD] Iniciar animación del logo | 0d | 2017-11-17 19:00 A | 2017-11-17 19:00 A | 68 | start no earlier than 2017-11-17 09:00 | Luis |
| 81 | [TDS] [NUEVA] Hacer guión de los personajes | 0d | 2017-11-27 09:00 A | 2017-11-27 09:00 A |  | finish no earlier than 2017-11-28 19:00 |  |
| 87 | [V1] [NUEVA] Iniciar el documento de diseño de toma de decisión: espacio y métodos | 0d | 2017-11-29 09:00 A | 2017-11-29 09:00 A |  | start no earlier than 2017-11-29 09:00 |  |
| 88 | [V1] [NUEVA] Acoplar sistema de IA | 0d | 2017-11-29 09:00 A | 2017-11-29 09:00 A |  | start no earlier than 2017-11-29 09:00 |  |
| 93 | Hacer reuniones de seguimiento diarias de 15 min | 10d | 2017-11-30 09:00 | 2017-12-13 19:00 |  | start no earlier than 2017-11-30 09:00 |  |
| 95 | **[TDS] [RETRASO] Integrar del motor de audio en el juego con prueba de concepto [1/2]** | 2d | 2017-11-30 09:00 | 2017-12-01 19:00 |  |  |  |
| 96 | [TDS] Hacer prototipo de fachada de audio | 2d | 2017-11-30 09:00 | 2017-12-01 19:00 |  | finish no earlier than 2017-12-01 19:00 | Adrián [78%]; Pablo [78%] |
| 97 | **[V2] Diseñar e implementar de la arquitectura basada en componentes (diagrama de clases e implementación) [3/4]** | 1d | 2017-11-30 09:00 | 2017-11-30 19:00 |  |  |  |
| 98 | [V2] Diseñar e implementar la arquitectura de componentes final [2/3] | 1d | 2017-11-30 09:00 | 2017-11-30 19:00 | 71 |  | Luis [63%]; Laura [63%] |
| 100 | [V2] Implementar las mecánicas de acción | 2d | 2017-12-01 09:00 | 2017-12-04 19:00 |  | finish no earlier than 2017-12-04 19:00 | Laura [46%]; Luis [46%] |
| 101 | [RV] Dibujar los bocetos del entorno | 2d | 2017-12-01 09:00 | 2017-12-04 19:00 |  | finish no earlier than 2017-12-04 19:00 | Laura [50%] |
| 103 | **[TDS] Grabaciones propias[2/2]** | 1d | 2017-12-05 09:00 | 2017-12-05 19:00 |  |  |  |
| 104 | [TDS] Grabar voces personajes [1/4] | 1d | 2017-12-05 09:00 | 2017-12-05 19:00 |  | start no earlier than 2017-12-05 09:00 | Luis [33%]; Pablo [33%]; Adrián [33%] |
| 105 | [V2] Implementar las mecánicas básicas entidades sin IA [1/2] | 2d | 2017-12-05 09:00 | 2017-12-06 19:00 |  | finish no earlier than 2017-12-06 19:00 | Luis [34%]; Laura [34%] |
| 106 | [V2] [RETRASO] Realizar el sistema de control del player por motor de físicas 2D, dynamic o kinematic | 2d | 2017-12-06 09:00 | 2017-12-07 19:00 | 99 | finish no earlier than 2017-12-07 19:00 | Laura [58%]; Luis [58%] |
| 107 | [V1] Hacer el sistema de percepción sensorial (vista, oído, olfato, canales…) [2/2] | 2d | 2017-12-06 09:00 | 2017-12-07 19:00 |  | finish no earlier than 2017-12-07 19:00 | Adrián [56%]; Alexei [56%]; Pablo [56%] |
| 108 | [PD] Realizar el vídeo con animación del logo de la empresa [1/2] | 1d | 2017-12-08 09:00 | 2017-12-08 19:00 |  | start no earlier than 2017-12-08 09:00 | Alexei [41%]; Laura [41%]; Luis [41%] |
| 109 | [V1] Realizar el sistema de toma de decisión con Behaviour Trees [1/2] | 2d | 2017-12-08 09:00 | 2017-12-11 19:00 |  | finish no earlier than 2017-12-11 19:00 | Adrián [56%]; Alexei [56%]; Pablo [56%] |
| 111 | [V2] Implementar la cámara de seguimiento | 1d | 2017-12-11 09:00 | 2017-12-11 19:00 | 106 | start no earlier than 2017-12-11 09:00 | Laura [87%]; Luis [87%] |
| 113 | [PM] Aplicar el modelo EVA en Project [2/3] | 0.5d | 2017-12-13 09:00 | 2017-12-13 13:00 |  | start no earlier than 2017-12-13 09:00 | Adrián [38%]; Alexei [38%] |
| 114 | [PM] Realizar informe iteración 4 | 0.5d | 2017-12-13 15:00 | 2017-12-13 19:00 | 94, 100, 101, 102, 103, 106, 107, 110, 111, 112, 113, 92 | start no earlier than 2017-12-13 09:00 | Laura [25%]; Luis [25%]; Pablo [25%] |
| 118 | Hacer reuniones de seguimiento diarias de 15 min | 6.5d | 2017-12-14 09:00 | 2017-12-22 13:00 |  | start no earlier than 2017-12-14 09:00 |  |
| 119 | [V1] Realizar el sistema de toma de decisión con Behaviour Trees [2/2] | 1d | 2017-12-14 09:00 | 2017-12-14 19:00 | 109 |  | Adrián [63%]; Pablo [63%] |
| 120 | **[V2] Diseñar e implementar de la arquitectura basada en componentes (diagrama de clases e implementación) [4/4]** | 1d | 2017-12-14 09:00 | 2017-12-14 19:00 |  |  |  |
| 121 | [V2] Diseñar e implementar la arquitectura de componentes final [3/3] | 1d | 2017-12-14 09:00 | 2017-12-14 19:00 | 98 |  | Luis [63%]; Laura [63%] |
| 122 | [PD] Vídeo con animación del logo de la empresa [2/2] | 2d | 2017-12-14 09:00 | 2017-12-15 19:00 | 108 | finish no earlier than 2017-12-15 19:00 | Alexei [31%]; Laura [31%]; Luis [31%] |
| 123 | [V2] Hacer mecánicas básicas entidades sin IA [2/2] | 1d | 2017-12-15 09:00 | 2017-12-15 19:00 | 105 | start no earlier than 2017-12-15 09:00 | Laura [63%]; Luis [63%] |
| 124 | [TDS] Implementar la integración del motor de audio en el juego con prueba de concepto[2/2] | 1d | 2017-12-15 09:00 | 2017-12-15 19:00 |  | start no earlier than 2017-12-15 09:00 | Adrián [63%] |
| 130 | [TDS] Grabación de síntesis [1/2] | 1d | 2017-12-19 09:00 | 2017-12-19 19:00 |  | start no earlier than 2017-12-19 09:00 | Adrián [41%]; Luis [41%]; Pablo [41%] |
| 131 | [TDS] [RETRASO] Realizar la hoja de metadatos | 1d | 2017-12-20 09:00 | 2017-12-20 19:00 | 130 | start no earlier than 2017-12-20 09:00 | Adrián [43%]; Luis [73%]; Pablo [73%] |
| 135 | [PM] Aplicar el modelo EVA en Project [3/3] | 0.25d | 2017-12-22 09:00 | 2017-12-22 11:00 |  | start no earlier than 2017-12-22 09:00 | Adrián [37%]; Alexei [37%] |
| 212 | [TDS] Síntesis [2/2] | 3.75d | 2018-01-11 09:00 | 2018-01-16 17:00 |  | start no earlier than 2018-01-11 09:00 |  |

Removed: 87 [PM] Detallar plan iteraciones del mes de Diciembre. Creación Subtareas y precedencias en Project (2/2); 88 [PM] Detallar plan iteraciones del mes de Diciembre. Asignar recursos a las tareas en Project (2/2); 89 [PM] Aplicar el modelo EVA en Project; 91 [V1] Sistema de percepción sensorial (vista, oído, olfato, canales…)[2/2]; 96 [V2] Mecánicas de acción; 97 [V2] Implementación de cámara de seguimiento; 98 [RV] Bocetos del entorno; 111 [V1] Sistema de toma de decisión con Behaviour Trees; 112 [V2] Diseño e implementación de la arquitectura basada en componentes (diagrama de clases e implementación); 113 [V2] Mecánicas básicas entidades sin IA; 114 [TDS] Síntesis; 115 [TDS] Grabaciones propias[2/2]; 119 [TDS] Hoja de metadatos; 120 [TDS] Integración del motor de audio en el juego con prueba de concepto[2/2]; 121 [PD] Vídeo con animación del logo de la empresa

Changed:

| ID | Task | Start | Finish | Duration | Complete | Total float | Predecessors | Other |
| --- | --- | --- | --- | --- | --- | --- | --- | --- |
| 13 | **Hito 1** |  | 2018-01-02 17:00 → 2017-12-22 19:00 (-11d) | 53.25d? → 46.5d? | 25% → 54% | 106.25d → 113d |  |  |
| 56 | **Iteración 3** | 2017-11-16 09:00 A |  |  | 0% → 90% |  |  |  |
| 57 | [PM] Registrar tiempos y % de realización de tareas en Project (3/5) | 2017-11-16 09:00 A | 2017-11-29 19:00 A |  | 0% → 100% | 120d → none |  |  |
| 58 | Hacer reuniones de seguimiento diarias de 15 min | 2017-11-16 09:00 A | 2017-11-29 19:00 A |  | 0% → 100% | 130d → none |  | was named [PM] Hacer reuniones de seguimiento diarias de 15 min |
| 60 | [V2] Decidir y aprender sobre el motor de físicas a utilizar | 2017-11-16 09:00 A | 2017-11-16 19:00 → 2017-11-16 09:00 A | 1d → 0d | 0% → 100% | -23.45d → none |  |  |
| 62 | [RV] Bocetar los elementos | 2017-11-16 09:00 A | 2017-11-17 19:00 A |  | 0% → 100% | 138d → none |  |  |
| 63 | [V1] Hacer sistema de percepción sensorial (vista, oído, olfato, canales…)[1/2] | 2017-11-16 09:00 A | 2017-11-20 19:00 A |  | 0% → 100% | 137d → none |  |  |
| 64 | **[TDS] Integrar del motor de audio en el juego con prueba de concepto[1/2]** | 2017-11-17 09:00 A |  |  | 0% → 33% | -21.45d → 21.25d |  |  |
| 65 | [TDS] Instalar FMOD STUDIO y FMOD STUDIO API | 2017-11-17 09:00 A | 2017-11-17 19:00 A |  | 0% → 100% | -21.45d → none |  |  |
| 67 | **[PD] Crear vídeo con animación del logo de la empresa [3/5]** | 2017-11-17 09:00 A | 2017-11-17 19:00 A |  | 0% → 100% | -19.45d → none |  |  |
| 68 | [PD] Hacer storyboard de la animación | 2017-11-17 09:00 A | 2017-11-17 19:00 A |  | 0% → 100% | -19.45d → none |  |  |
| 70 | **[V2] Diseñar e implementar de la arquitectura basada en componentes (diagrama de clases e implementación) [2/4]** | 2017-11-20 09:00 A | 2017-11-24 19:00 A |  | 0% → 100% | -24.45d → none |  |  |
| 71 | [V2] Diseñar e implementar la arquitectura de componentes final [1/3] | 2017-11-20 09:00 A | 2017-11-24 19:00 A |  | 0% → 100% | -24.45d → none |  |  |
| 72 | [V1] Hacer sistema de gestión de eventos (Trigger System/Event Manager) [1/2] | 2017-11-20 09:00 A | 2017-11-24 19:00 A |  | 0% → 100% | 133d → none |  |  |
| 75 | **[V1] Hacer el sistema de toma de decisión con Lógica Difusa [2/3]** | 2017-11-22 09:00 A | 2017-11-24 19:00 A |  | 0% → 100% | -24.45d → none |  |  |
| 76 | [V1] Hacer prototipo inicial del sistema de toma de decisión con lógica difusa | 2017-11-22 09:00 A | 2017-11-24 19:00 A |  | 0% → 100% | -24.45d → none |  |  |
| 77 | [V1] Hacer el sistema de Waypoints para pathfinding continuo [2/3] | 2017-11-22 09:00 A | 2017-11-24 19:00 A |  | 0% → 100% | 133d → none |  |  |
| 78 | [PM] Aplicar el modelo EVA en Project [1/3] | 2017-11-27 09:00 A | 2017-11-27 19:00 A |  | 0% → 100% | 131.5d → none |  | was named [PM] Aplicar el modelo EVA en Project |
| 79 | [V2] [RETRASO] Realizar el sistema de control del player por motor de físicas 2D, dynamic o kinematic | 2017-11-27 09:00 A |  |  | 0% → 25% | 130.5d → 131d |  |  |
| 80 | **[TDS] Hacer grabaciones propias [1/2]** | 2017-11-27 09:00 A | 2017-11-28 19:00 A |  | 0% → 100% |  |  |  |
| 82 | [TDS] Grabar voces personajes [3/4] | 2017-11-27 09:00 A | 2017-11-28 19:00 A |  | 0% → 100% | 131d → none |  | was named [TDS] Grabar voces personajes [2/4] |
| 83 | [PM] Detallar plan iteraciones del mes de Diciembre. Creación Subtareas y precedencias en Project | 2017-11-28 09:00 A | 2017-11-28 13:00 A |  | 0% → 100% | 130.5d → none |  | was named [PM] Detallar plan iteraciones del mes de Diciembre. Creación Subtareas y precedencias en Project (1/2) |
| 84 | [PM] Detallar plan iteraciones del mes de Diciembre. Asignar recursos a las tareas en Project | 2017-11-28 15:00 A | 2017-11-28 19:00 A |  | 0% → 100% | 130.5d → none |  | was named [PM] Detallar plan iteraciones del mes de Diciembre. Asignar recursos a las tareas en Project (1/2) |
| 89 | [PM] Realizar informe iteración 3 | 2017-11-29 09:00 A | 2017-11-29 13:00 A |  | 0% → 100% | 130.5d → none |  |  |
| 92 | [PM] Registrar tiempos y % de realización de tareas en Project (4/5) |  | 2017-12-13 19:00 → 2017-12-13 13:00 | 10d → 9.5d |  | 120d → 15.25d | 57 → none | constraint finish no earlier than 2017-11-29 19:00 → start no earlier than 2017-11-30 09:00; resources none → Adrián [1%]; Alexei [1%]; Laura [1%]; Luis [1%]; Pablo [1%] |
| 94 | [V1] Hacer el sistema de toma de decisión con Lógica Difusa [3/3] | 2017-11-16 17:00 → 2017-11-30 09:00 (+14d) | 2017-11-24 19:00 → 2017-12-01 19:00 (+7d) | 6.25d → 2d |  | 133d → 22.75d | 42 → none | constraint finish no earlier than 2017-11-24 19:00 → finish no earlier than 2017-12-01 19:00; resources none → Alexei [63%] |
| 99 | [V2] Utilización de propiedades físicas en las mecánicas jugables |  | 2017-12-01 18:02 → 2017-11-30 19:00 (-1d) | 1.88d → 1d |  | -21.88d → 20.75d |  | resources none → Laura [31%]; Luis [31%] |
| 102 | [V1] Hacer el sistema de Waypoints para pathfinding continuo [3/3] | 2017-11-24 15:00 → 2017-12-04 09:00 (+10d) | 2017-12-05 19:00 → 2017-12-04 19:00 (-1d) | 7.5d → 1d |  | 126d → 21.75d | 44 → none | constraint finish no earlier than 2017-12-05 19:00 → start no earlier than 2017-12-04 09:00; resources none → Adrián [41%]; Alexei [41%]; Pablo [41%] |
| 110 | [V1] Hacer el sistema de gestión de eventos (Trigger System/Event Manager) [2/2] | 2017-11-30 09:57 → 2017-12-11 09:00 (+11d) | 2017-12-08 19:00 → 2017-12-12 19:00 (+4d) | 6.88d → 2d |  | 123d → 15.75d |  | was named [V1] Sistema de gestión de eventos (Trigger System/Event Manager)[2/2]; constraint finish no earlier than 2017-12-08 19:00 → start no earlier than 2017-12-11 09:00; resources none → Laura [12%]; Luis [12%]; Adrián [52%]; Alexei [52%]; Pablo [52%] |
| 112 | [V2] Definir el formato propio para la definición de los niveles (documento con la especificación del formato) (2/2) | 2017-11-16 17:00 → 2017-12-12 09:00 (+26d) | 2017-11-17 19:00 → 2017-12-12 19:00 (+25d) | 1.25d → 1d |  | 138d → 15.75d |  | was named [V2] Formato propio para la definición de los niveles (documento con la especificación del formato) (2/2); constraint finish no earlier than 2017-11-17 19:00 → start no earlier than 2017-12-12 09:00; resources none → Adrián [12%]; Alexei [12%]; Laura [12%]; Luis [12%]; Pablo [12%] |
| 115 | Objetivo iteración 4 | 2017-12-08 11:00 → 2017-12-13 19:00 (+5d) | 2017-12-08 11:00 → 2017-12-13 19:00 (+5d) |  |  | -26.25d → 15.25d | [PM] Detallar plan iteraciones del mes de Diciembre. Creación Subtareas y precedencias en Project (2/2), [PM] Detallar plan iteraciones del mes de Diciembre. Asignar recursos a las tareas en Project (2/2), [V1] Sistema de percepción sensorial (vista, oído, olfato, canales…)[2/2], 99, [V2] Implementación de cámara de seguimiento, [RV] Bocetos del entorno → 114 |  |
| 116 | **Iteración 5** |  |  |  | 9% → 0% |  |  |  |
| 117 | [PM] Registrar tiempos y % de realización de tareas en Project (5/5) |  | 2017-12-14 12:36 → 2017-12-22 13:00 (+8d) | 0.45d → 6.5d |  | 21.55d → 15.25d | [PM] Detallar plan iteraciones del mes de Diciembre. Creación Subtareas y precedencias en Project (2/2) → none | resources none → Adrián [1%]; Alexei [1%]; Laura [1%]; Luis [1%]; Pablo [1%] |
| 125 | [V1] Acabar el documento de diseño de mecánicas de los NPCs | 2017-11-02 09:00 A → 2017-12-18 09:00 (+46d) | 2017-11-02 13:00 A → 2017-12-18 19:00 (+46d) | 0.5d → 1d | 100% → 0% | none → 18.75d |  | constraint start no earlier than 2017-11-02 09:00 → start no earlier than 2017-12-18 09:00; resources none → Adrián [12%]; Alexei [12%]; Pablo [12%]; Laura [12%]; Luis [12%] |
| 126 | [V1] Acabar el documento de diseño de toma de decisión: espacio y métodos | 2017-11-02 09:00 A → 2017-12-18 09:00 (+46d) | 2017-11-02 18:31 A → 2017-12-18 19:00 (+46d) | 0.94d → 1d | 100% → 0% | none → 18.75d |  | constraint start no earlier than 2017-11-02 09:00 → start no earlier than 2017-12-18 09:00; resources none → Adrián [31%]; Alexei [31%]; Pablo [31%] |
| 127 | [V1] Acabar el documento de diseño técnico del motor de IA | 2017-11-03 09:00 A → 2017-12-18 09:00 (+45d) | 2017-11-03 18:31 A → 2017-12-18 19:00 (+45d) | 0.94d → 1d | 100% → 0% | none → 18.75d |  | constraint start no earlier than 2017-11-03 09:00 → start no earlier than 2017-12-18 09:00; resources none → Adrián [31%]; Alexei [31%]; Pablo [31%] |
| 128 | [V1] Realizar el documento de diseño de requerimientos y funciones de red | 2017-11-02 17:00 A → 2017-12-18 09:00 (+46d) | 2017-11-03 19:00 A → 2017-12-18 19:00 (+45d) | 1.25d → 1d | 100% → 0% | none → 18.75d |  | was named [V1] Diseño de requerimientos y funciones de red; constraint finish no earlier than 2017-11-03 19:00 → start no earlier than 2017-12-18 09:00; resources none → Adrián [25%]; Alexei [25%]; Laura [25%]; Luis [25%]; Pablo [25%] |
| 129 | [V1] Realizar el documento de diseño técnico del motor de red | 2017-11-02 09:57 A → 2017-12-19 09:00 (+47d) | 2017-11-03 19:00 A → 2017-12-19 19:00 (+46d) | 1.88d → 1d | 100% → 0% | none → 17.75d |  | was named [V1] Diseño técnico del motor de red; constraint finish no earlier than 2017-11-03 19:00 → start no earlier than 2017-12-19 09:00; resources none → Adrián [37%]; Alexei [37%]; Laura [37%]; Luis [37%]; Pablo [37%] |
| 132 | [PM] Comparar la planificación prevista y real en Project hito 1 | 2017-12-14 09:00 → 2017-12-20 18:12 (+6d) | 2017-12-18 11:00 → 2017-12-21 19:00 (+3d) | 2.25d → 1.1d |  | 14.5d → 15.75d |  | constraint none → finish no earlier than 2017-12-21 19:00; resources none → Adrián [56%]; Alexei [56%] |
| 133 | [TDS] [RETRASO] Modificar y añadir sonidos externos [2/2] | 2017-12-15 16:02 → 2017-12-21 09:00 (+6d) | 2017-12-21 12:02 → 2017-12-22 13:00 (+1d) | 3.75d → 1.5d |  | 16.62d → 15.25d | 134 → none | was named [TDS] Sonidos externos[2/2]; constraint none → start no earlier than 2017-12-21 09:00; resources none → Adrián [41%]; Luis [41%]; Pablo [41%] |
| 134 | [TDS] [RETRASO] Realizar la Cue Sheet [3-4-5-6/6] | 2017-12-14 09:00 → 2017-12-21 09:00 (+7d) | 2017-12-15 16:02 → 2017-12-21 13:00 (+6d) | 1.63d → 0.5d |  | 12.87d → 16.25d | none → 130, 131 | was named [TDS] Cue Sheet; constraint none → start no earlier than 2017-12-21 09:00; resources none → Luis [41%]; Pablo [41%] |
| 136 | [PM] Confeccionar Informes de iteración e informe resumen de Hito 1 | 2017-12-18 11:00 → 2017-12-22 15:00 (+4d) | 2017-12-20 13:00 → 2017-12-22 17:00 (+2d) | 2.25d → 0.25d |  | 14.5d → 15.25d | 132 → 117, 119, 120, 122, 123, 124, 125, 126, 127, 128, 129, 130, 131, 132, 133, 134, 135 | constraint none → start no earlier than 2017-12-22 09:00; resources none → Pablo [9%]; Laura [9%]; Luis [9%] |
| 137 | Objetivo iteración 5 | 2018-01-02 17:00 → 2017-12-22 17:00 (-11d) | 2018-01-02 17:00 → 2017-12-22 17:00 (-11d) |  |  | 8.25d → 15.25d | 117, 132, 136, 138, 139, [V1] Sistema de toma de decisión con Behaviour Trees, [V2] Diseño e implementación de la arquitectura basada en componentes (diagrama de clases e implementación), [V2] Mecánicas básicas entidades sin IA, [TDS] Síntesis, [TDS] Grabaciones propias[2/2], 133, 211, 134, [TDS] Hoja de metadatos, [TDS] Integración del motor de audio en el juego con prueba de concepto[2/2], [PD] Vídeo con animación del logo de la empresa → 136 |  |
| 138 | [PM] Elaborar la presentación del Hito 1 | 2017-12-20 15:00 → 2017-12-14 09:00 (-6d) | 2017-12-21 19:00 → 2017-12-14 19:00 (-7d) | 1.5d → 1d |  | 14.5d → 21d | 136 → none |  |
| 139 | [PM] Exponer la presentación del Hito 1 | 2017-12-22 09:00 → 2017-12-15 09:00 (-7d) | 2017-12-25 13:00 → 2017-12-15 19:00 (-10d) | 1.5d → 1d |  | 14.5d → 118d | 138 → none | constraint none → start no earlier than 2017-12-15 09:00 |
| 211 | [TDS] Música | 2017-12-21 12:02 → 2017-12-22 11:00 (+1d) | 2017-12-27 10:02 → 2017-12-27 19:00 |  |  | 12.87d → 110d | [TDS] Síntesis → none | constraint none → finish no earlier than 2017-12-27 19:00 |

## Version 7 (data date 2017-11-15, saved 2017-12-13)

Note of the change: Modelo EVA iteracion 4 realizado

Last finish stays 2018-05-30. Complete tasks 64 → 86.

Added:

| ID | Task | Duration | Start | Finish | Constraint | Resources |
| --- | --- | --- | --- | --- | --- | --- |
| 94 | [NUEVA] Instalar Manjaro | 0d | 2017-11-30 09:00 A | 2017-11-30 09:00 A |  |  |
| 97 | [TDS] Instalar FMOD API y FMOD STUDIO API | 0.33d | 2017-12-05 09:00 A | 2017-12-05 11:38 A | start no earlier than 2017-12-05 09:00 | Adrián |
| 107 | [TDS][NUEVA] Editar voces y aplicarles efectos | 0d | 2017-12-05 09:00 A | 2017-12-05 09:00 A | start no earlier than 2017-12-05 09:00 |  |
| 117 | [TDS] [ADELANTO] Modificar y añadir sonidos externos [2/2] | 0d | 2017-12-13 09:00 A | 2017-12-13 09:00 A | start no earlier than 2017-12-13 09:00 |  |
| 139 | [RETRASO] [V2] Definir el formato propio para la definición de los niveles (documento con la especificación del formato) (2/2) | 0.13d | 2017-12-21 09:00 | 2017-12-21 10:02 | start no earlier than 2017-12-21 09:00 | Adrián [12%]; Alexei [12%]; Laura [12%]; Luis [12%]; Pablo [12%] |

Changed:

| ID | Task | Start | Finish | Duration | Complete | Total float | Predecessors | Other |
| --- | --- | --- | --- | --- | --- | --- | --- | --- |
| 13 | **Hito 1** |  |  |  | 54% → 78% |  |  |  |
| 91 | **Iteración 4** | 2017-11-30 09:00 A |  |  | 0% → 93% |  |  |  |
| 92 | [PM] Registrar tiempos y % de realización de tareas en Project (4/5) | 2017-11-30 09:00 A | 2017-12-13 13:00 A |  | 0% → 100% | 15.25d → none |  |  |
| 93 | Hacer reuniones de seguimiento diarias de 15 min | 2017-11-30 09:00 A | 2017-12-13 19:00 A |  | 0% → 100% | 120d → none |  |  |
| 95 | [V1] Hacer el sistema de toma de decisión con Lógica Difusa [3/3] | 2017-11-30 09:00 A | 2017-12-01 19:00 A |  | 0% → 100% | 22.75d → none |  |  |
| 96 | **[TDS] [RETRASO] Integrar del motor de audio en el juego con prueba de concepto [1/2]** | 2017-11-30 09:00 A | 2017-12-01 19:00 → 2017-12-05 11:38 A (+4d) | 2d → 3.33d | 0% → 100% | 23.25d → none |  |  |
| 98 | [TDS] Hacer prototipo de fachada de audio | 2017-11-30 09:00 A | 2017-12-01 19:00 A |  | 0% → 100% | 23.25d → none |  |  |
| 99 | **[V2] Diseñar e implementar de la arquitectura basada en componentes (diagrama de clases e implementación) [3/4]** | 2017-11-30 09:00 A | 2017-11-30 19:00 A |  | 0% → 100% | 24.25d → none |  |  |
| 100 | [V2] Diseñar e implementar la arquitectura de componentes final [2/3] | 2017-11-30 09:00 A | 2017-11-30 19:00 A |  | 0% → 100% | 24.25d → none |  |  |
| 101 | [V2] Utilizar propiedades físicas en las mecánicas jugables | 2017-11-30 09:00 A | 2017-11-30 19:00 A |  | 0% → 100% | 20.75d → none |  | was named [V2] Utilización de propiedades físicas en las mecánicas jugables |
| 102 | [V2] Implementar las mecánicas de acción | 2017-12-01 09:00 A | 2017-12-04 19:00 A |  | 0% → 100% | 21.75d → none |  |  |
| 103 | [RV] Dibujar los bocetos del entorno | 2017-12-01 09:00 A | 2017-12-04 19:00 A |  | 0% → 100% | 21.75d → none |  |  |
| 104 | [V1] Hacer el sistema de Waypoints para pathfinding continuo [3/3] | 2017-12-04 09:00 A | 2017-12-04 19:00 A |  | 0% → 100% | 21.75d → none |  |  |
| 105 | **[TDS] Grabaciones propias[2/2]** | 2017-12-05 09:00 A | 2017-12-05 19:00 A |  | 0% → 100% | 20.75d → none |  |  |
| 106 | [TDS] Grabar voces personajes [1/4] | 2017-12-05 09:00 A | 2017-12-05 19:00 A |  | 0% → 100% | 20.75d → none |  |  |
| 108 | [V2] Implementar las mecánicas básicas entidades sin IA [1/2] | 2017-12-05 09:00 A | 2017-12-06 19:00 A |  | 0% → 100% | 25.75d → none |  |  |
| 109 | [V2] [RETRASO] Realizar el sistema de control del player por motor de físicas 2D, dynamic o kinematic | 2017-12-06 09:00 A | 2017-12-07 19:00 A |  | 0% → 100% | 17.75d → none |  |  |
| 110 | [V1] Hacer el sistema de percepción sensorial (vista, oído, olfato, canales…) [2/2] | 2017-12-06 09:00 A | 2017-12-07 19:00 A |  | 0% → 100% | 18.75d → none |  |  |
| 111 | [PD] Realizar el vídeo con animación del logo de la empresa [1/2] | 2017-12-08 09:00 A | 2017-12-08 19:00 A |  | 0% → 100% | 22.75d → none |  |  |
| 113 | [V1] Hacer el sistema de gestión de eventos (Trigger System/Event Manager) [2/2] | 2017-12-11 09:00 A | 2017-12-12 19:00 A |  | 0% → 100% | 15.75d → none |  |  |
| 114 | [V2] Implementar la cámara de seguimiento | 2017-12-11 09:00 A | 2017-12-11 19:00 A |  | 0% → 100% | 16.75d → none |  |  |
| 116 | [PM] Aplicar el modelo EVA en Project [2/3] | 2017-12-13 09:00 A | 2017-12-13 13:00 A |  | 0% → 100% | 15.25d → none |  |  |
| 118 | [PM] Realizar informe iteración 4 | 2017-12-13 15:00 A | 2017-12-13 19:00 A |  | 0% → 100% | 15.25d → none |  |  |
| 123 | [V1] Realizar el sistema de toma de decisión con Behaviour Trees [1-2/2] |  | 2017-12-14 19:00 → 2017-12-15 19:00 (+1d) | 1d → 2d |  | 20.75d → 19.75d |  | was named [V1] Realizar el sistema de toma de decisión con Behaviour Trees [2/2]; resources Adrián [63%]; Pablo [63%] → Alexei [66%]; Adrián [66%]; Pablo [66%] |
| 128 | [TDS] Implementar la integración del motor de audio en el juego con prueba de concepto[2/2] |  |  |  |  |  |  | resources Adrián [63%] → Adrián [25%] |
| 135 | [TDS] [RETRASO] Realizar la hoja de metadatos |  | 2017-12-20 19:00 → 2017-12-21 16:34 (+1d) | 1d → 1.7d |  | 16.25d → 15.55d |  | resources Adrián [43%]; Luis [73%]; Pablo [73%] → Adrián [43%]; Luis [43%]; Pablo [43%] |
| 138 | [TDS] [RETRASO] Realizar la Cue Sheet [3-4-5-6/6] | 2017-12-21 09:00 → 2017-12-21 16:34 | 2017-12-21 13:00 → 2017-12-22 10:34 (+1d) |  |  | 16.25d → 15.55d |  | resources Luis [41%]; Pablo [41%] → Luis [19%]; Pablo [19%] |
| 144 | [PM] Elaborar la presentación del Hito 1 | 2017-12-14 09:00 → 2018-01-11 09:00 (+28d) | 2017-12-14 19:00 → 2018-01-11 19:00 (+28d) |  |  | 21d → 98d |  | constraint none → start no earlier than 2018-01-11 09:00 |
| 145 | [PM] Exponer la presentación del Hito 1 | 2017-12-15 09:00 → 2018-01-12 09:00 (+28d) | 2017-12-15 19:00 → 2018-01-12 19:00 (+28d) |  |  | 118d → 98d | none → 144 | constraint start no earlier than 2017-12-15 09:00 → start no earlier than 2018-01-12 09:00 |

## Version 8 (data date 2017-11-15, saved 2017-12-22)

Note of the change: el video

Last finish stays 2018-05-30. Complete tasks 86 → 114.

Added:

| ID | Task | Duration | Start | Finish | Constraint |
| --- | --- | --- | --- | --- | --- |
| 142 | [V1] [NUEVO] Hacer el sistema de percepción sensorial (vista, oído, olfato, canales…) [2/2] | 0d | 2017-12-22 09:00 A | 2017-12-22 09:00 A | start no earlier than 2017-12-22 09:00 |
| 143 | [V1] [NUEVO]Acoplar sistema de IA | 0d | 2017-12-22 09:00 A | 2017-12-22 09:00 A | start no earlier than 2017-12-22 09:00 |
| 144 | [V1] [NUEVO] Preparar ejecutable para la máquina objetivo | 0d | 2017-12-22 09:00 A | 2017-12-22 09:00 A | start no earlier than 2017-12-22 09:00 |
| 145 | [V2] [NUEVO] [ADELANTADO] [HITO 3] Diseñar y crear niveles | 0d | 2017-12-22 09:00 A | 2017-12-22 09:00 A | start no earlier than 2017-12-22 09:00 |
| 146 | [V2] [NUEVO] [ADELANTADO][HITO 2] Hacer power-ups y elementos adicionales | 0d | 2017-12-22 09:00 A | 2017-12-22 09:00 A | start no earlier than 2017-12-22 09:00 |
| 147 | [V2] [NUEVO] Implementar las mecánicas de acción | 0d | 2017-12-22 09:00 A | 2017-12-22 09:00 A | start no earlier than 2017-12-22 09:00 |
| 148 | [V2] [NUEVO] Realizar el sistema de control del player por motor de físicas 2D, dynamic o kinematic | 0d | 2017-12-22 09:00 A | 2017-12-22 09:00 A | start no earlier than 2017-12-22 09:00 |
| 149 | [V2] [NUEVO] Utilizar propiedades físicas en las mecánicas jugables | 0d | 2017-12-22 09:00 A | 2017-12-22 09:00 A | start no earlier than 2017-12-22 09:00 |
| 150 | [NUEVO] Preparar entregables hito 1 | 0d | 2017-12-22 09:00 A | 2017-12-22 09:00 A | start no earlier than 2017-12-22 09:00 |

Removed: 155 [V2] Power-ups y elementos adicionales

Changed:

| ID | Task | Start | Finish | Complete | Total float |
| --- | --- | --- | --- | --- | --- |
| 13 | **Hito 1** |  |  | 78% → 95% |  |
| 120 | **Iteración 5** | 2017-12-14 09:00 A |  | 0% → 97% |  |
| 121 | [PM] Registrar tiempos y % de realización de tareas en Project (5/5) | 2017-12-14 09:00 A | 2017-12-22 13:00 A | 0% → 100% | 15.25d → none |
| 122 | Hacer reuniones de seguimiento diarias de 15 min | 2017-12-14 09:00 A | 2017-12-22 13:00 A | 0% → 100% | 113.5d → none |
| 123 | [V1] Realizar el sistema de toma de decisión con Behaviour Trees [1-2/2] | 2017-12-14 09:00 A | 2017-12-15 19:00 A | 0% → 100% | 19.75d → none |
| 124 | **[V2] Diseñar e implementar de la arquitectura basada en componentes (diagrama de clases e implementación) [4/4]** | 2017-12-14 09:00 A | 2017-12-14 19:00 A | 0% → 100% | 20.75d → none |
| 125 | [V2] Diseñar e implementar la arquitectura de componentes final [3/3] | 2017-12-14 09:00 A | 2017-12-14 19:00 A | 0% → 100% | 20.75d → none |
| 126 | [PD] Vídeo con animación del logo de la empresa [2/2] | 2017-12-14 09:00 A | 2017-12-15 19:00 A | 0% → 100% | 19.75d → none |
| 127 | [V2] Hacer mecánicas básicas entidades sin IA [2/2] | 2017-12-15 09:00 A | 2017-12-15 19:00 A | 0% → 100% | 19.75d → none |
| 128 | [TDS] Implementar la integración del motor de audio en el juego con prueba de concepto[2/2] | 2017-12-15 09:00 A | 2017-12-15 19:00 A | 0% → 100% | 19.75d → none |
| 129 | [V1] Acabar el documento de diseño de mecánicas de los NPCs | 2017-12-18 09:00 A | 2017-12-18 19:00 A | 0% → 100% | 18.75d → none |
| 130 | [V1] Acabar el documento de diseño de toma de decisión: espacio y métodos | 2017-12-18 09:00 A | 2017-12-18 19:00 A | 0% → 100% | 18.75d → none |
| 131 | [V1] Acabar el documento de diseño técnico del motor de IA | 2017-12-18 09:00 A | 2017-12-18 19:00 A | 0% → 100% | 18.75d → none |
| 132 | [V1] Realizar el documento de diseño de requerimientos y funciones de red | 2017-12-18 09:00 A | 2017-12-18 19:00 A | 0% → 100% | 18.75d → none |
| 133 | [V1] Realizar el documento de diseño técnico del motor de red | 2017-12-19 09:00 A | 2017-12-19 19:00 A | 0% → 100% | 17.75d → none |
| 135 | [TDS] [RETRASO] Realizar la hoja de metadatos | 2017-12-20 09:00 A | 2017-12-21 16:34 A | 0% → 100% | 15.55d → none |
| 136 | [PM] Comparar la planificación prevista y real en Project hito 1 | 2017-12-20 18:12 A | 2017-12-21 19:00 A | 0% → 100% | 15.75d → none |
| 137 | [TDS] [RETRASO] Modificar y añadir sonidos externos [2/2] | 2017-12-21 09:00 A | 2017-12-22 13:00 A | 0% → 100% | 15.25d → none |
| 138 | [TDS] [RETRASO] Realizar la Cue Sheet [3-4-5-6/6] | 2017-12-21 16:34 A | 2017-12-22 10:34 A | 0% → 100% | 15.55d → none |
| 139 | [RETRASO] [V2] Definir el formato propio para la definición de los niveles (documento con la especificación del formato) (2/2) | 2017-12-21 09:00 A | 2017-12-21 10:02 A | 0% → 100% | 114.87d → none |
| 140 | [PM] Aplicar el modelo EVA en Project [3/3] | 2017-12-22 09:00 A | 2017-12-22 11:00 A | 0% → 100% | 15.5d → none |
| 141 | [PM] Confeccionar Informes de iteración e informe resumen de Hito 1 | 2017-12-22 15:00 A | 2017-12-22 17:00 A | 0% → 100% | 15.25d → none |

## Version 9 (data date 2017-11-15, saved 2018-01-05)

Note of the change: Project actualizado

Last finish stays 2018-05-30. Complete tasks 114 → 126.

Added:

| ID | Task | Duration | Start | Finish | Predecessors | Constraint | Resources |
| --- | --- | --- | --- | --- | --- | --- | --- |
| 156 | [V1] Organizar la estructura del juego en carpetas | 0.5d | 2018-01-05 09:00 | 2018-01-05 13:00 |  |  | Luis [50%] |
| 157 | [V2] Integrar la librería para la GUI | 0.5d | 2018-01-05 09:00 | 2018-01-05 13:00 |  |  | Laura [63%] |
| 160 | [V2] Elaborar e integrar la GUI | 2d | 2018-01-08 09:00 | 2018-01-09 19:00 | 157 | start no earlier than 2018-01-08 09:00 | Laura [95%] |
| 161 | [V2] Gestionar colisiones de la cámara (sistema de depuración para ver colisiones) | 2d | 2018-01-08 09:00 | 2018-01-09 19:00 |  | start no earlier than 2018-01-08 09:00 | Luis [95%] |
| 162 | [V1] Crear un sistema de depuración visual in-game de la IA | 4d | 2018-01-05 09:00 | 2018-01-10 19:00 | 131 | finish no earlier than 2018-01-10 19:00 | Pablo [98%] |
| 165 | [V1] Desarrollar el multijugador en tiempo real | 6d | 2018-01-15 09:00 | 2018-01-22 19:00 | 133 | start no earlier than 2018-01-15 09:00 | Adrián [99%]; Alexei [99%] |
| 167 | [V2] Implementar el patron State | 2d | 2018-01-15 09:00 | 2018-01-16 19:00 | 157 | start no earlier than 2018-01-15 09:00 | Laura [98%] |
| 168 | Depurar el juego | 2d | 2018-01-23 09:00 | 2018-01-24 19:00 |  | start no earlier than 2018-01-23 09:00 | Adrián [99%]; Alexei [99%]; Laura [99%]; Luis [99%]; Pablo [99%] |
| 171 | Objetivo Hito 2 | 0d | 2018-01-26 19:00 | 2018-01-26 19:00 | 170 | start no earlier than 2018-01-26 09:00 |  |

Removed: 162 [V1] Sistema de depuración visual in-game de la IA; 163 [V1] Multijugador en tiempo real; 165 [V2] Gestión de colisiones de la cámara (sistema de depuración para ver colisiones); 166 [V2] Integración de librería para GUI

Changed:

| ID | Task | Start | Finish | Duration | Complete | Total float | Predecessors | Other |
| --- | --- | --- | --- | --- | --- | --- | --- | --- |
| 13 | **Hito 1** |  |  |  | 95% → 100% | 113d → none |  |  |
| 27 | **Iteración 2** |  |  |  | 99% → 100% |  |  |  |
| 55 | Objetivo iteración 2 | 2017-11-15 17:00 A | 2017-11-15 17:00 A |  | 0% → 100% | 0.25d → none |  |  |
| 56 | **Iteración 3** |  | 2017-11-29 19:00 A |  | 90% → 100% |  |  |  |
| 64 | **[TDS] Integrar del motor de audio en el juego con prueba de concepto[1/2]** |  | 2017-11-21 19:00 A |  | 33% → 100% | 6d → none |  |  |
| 66 | [TDS] Hacer prototipo de fachada de audio | 2017-11-20 09:00 A | 2017-11-21 19:00 A |  | 0% → 100% | 6d → none |  |  |
| 73 | **[TDS] Obtener sonidos externos [1/2]** | 2017-11-21 09:00 A | 2017-11-21 19:00 A |  | 0% → 100% | 6d → none |  |  |
| 74 | [TDS] Obtener biblioteca sonidos externos | 2017-11-21 09:00 A | 2017-11-21 19:00 A |  | 0% → 100% | 21.25d → none |  |  |
| 79 | [V2] [RETRASO] Realizar el sistema de control del player por motor de físicas 2D, dynamic o kinematic |  | 2017-11-28 19:00 A |  | 25% → 100% | 131d → none |  |  |
| 85 | [TDS] Rellenar Cue Sheet [3/6] | 2017-11-29 09:00 A | 2017-11-29 13:00 A |  | 0% → 100% | 130.5d → none |  |  |
| 86 | [TDS] Rellenar Hoja de metadatos [2/4] | 2017-11-29 09:00 A | 2017-11-29 13:00 A |  | 0% → 100% | 130.5d → none |  |  |
| 90 | Objetivo iteración 3 | 2017-11-29 13:00 A | 2017-11-29 13:00 A |  | 0% → 100% | 130.5d → none |  |  |
| 91 | **Iteración 4** |  | 2017-12-13 19:00 A |  | 93% → 100% |  |  |  |
| 112 | [V1] Realizar el sistema de toma de decisión con Behaviour Trees [1/2] | 2017-12-08 09:00 A | 2017-12-11 19:00 A |  | 0% → 100% | 21.75d → none |  |  |
| 115 | [V2] Definir el formato propio para la definición de los niveles (documento con la especificación del formato) (2/2) | 2017-12-12 09:00 A | 2017-12-12 19:00 A |  | 0% → 100% | 121d → none |  |  |
| 119 | Objetivo iteración 4 | 2017-12-13 19:00 A | 2017-12-13 19:00 A |  | 0% → 100% | 0d → none |  |  |
| 120 | **Iteración 5** |  |  |  | 97% → 100% |  |  |  |
| 134 | [TDS] Grabación de síntesis [1/2] | 2017-12-19 09:00 A | 2017-12-19 19:00 A |  | 0% → 100% | 15.55d → none |  |  |
| 151 | Objetivo iteración 5 | 2017-12-22 17:00 A | 2017-12-22 17:00 A |  | 0% → 100% | 15.25d → none |  |  |
| 152 | **Hito 2** | 2018-01-07 09:00 → 2018-01-05 09:00 (-2d) |  |  |  |  |  |  |
| 153 | [PM] Registrar tiempos y % de realización de tareas en Project | 2018-01-08 09:00 → 2018-01-05 09:00 (-3d) | 2018-01-08 16:02 → 2018-01-26 13:00 (+18d) | 0.63d → 15.5d |  | 79.87d → 88.5d |  | constraint none → start no earlier than 2018-01-05 09:00; resources none → Adrián [1%]; Alexei [1%]; Laura [1%]; Luis [1%]; Pablo [1%] |
| 154 | [PM] Detallar plan iteraciones del mes de Enero. Creación Subtareas y precedencias en Project | 2018-01-08 09:00 → 2018-01-05 09:00 (-3d) | 2018-01-08 19:00 → 2018-01-05 13:00 (-3d) | 1d → 0.5d |  | 79.5d → 80.5d |  | resources none → Adrián [49%]; Alexei [49%] |
| 155 | [PM] Detallar plan iteraciones del mes de Enero. Asignar recursos a las tareas en Project | 2018-01-08 09:00 → 2018-01-05 15:00 (-3d) | 2018-01-08 19:00 → 2018-01-05 19:00 (-3d) | 1d → 0.5d |  | 79.5d → 80.5d | none → 154 | resources none → Adrián [49%]; Alexei [49%] |
| 158 | [PM] Revisar especificación proyecto |  |  |  |  | 77.5d → 100d |  | constraint none → start no earlier than 2018-01-08 09:00; resources none → Adrián [49%]; Alexei [49%] |
| 159 | [PM] Reestimar proyecto |  |  |  |  | 77.5d → 100d |  | constraint none → start no earlier than 2018-01-08 09:00; resources none → Adrián [49%]; Alexei [49%] |
| 163 | [PM] Elaborar la presentación del Hito 1 |  |  |  |  | 98d → 97d |  | resources none → Adrián [30%]; Alexei [30%]; Laura [30%]; Luis [30%]; Pablo [30%] |
| 164 | [PM] Exponer la presentación del Hito 1 |  |  |  |  | 98d → 97d |  | resources none → Adrián [30%]; Alexei [30%]; Laura [30%]; Luis [30%]; Pablo [30%] |
| 166 | [V2] Creación de un cargador de niveles | 2018-01-08 09:00 → 2018-01-15 09:00 (+7d) | 2018-01-11 10:02 → 2018-01-18 19:00 (+7d) | 3.13d → 4d |  | 77.37d → 93d |  | constraint none → start no earlier than 2018-01-15 09:00; resources none → Luis [77%] |
| 169 | [PM] Comparar la planificación prevista y real en Project hito 2 | 2018-01-08 09:00 → 2018-01-25 09:00 (+17d) | 2018-01-08 16:02 → 2018-01-25 19:00 (+17d) | 0.63d → 1d |  | 79.87d → 88d | none → 154, 155 | constraint none → start no earlier than 2018-01-25 09:00; resources none → Adrián [31%]; Alexei [31%] |
| 170 | [PM] Confeccionar Informes de iteración e informe resumen de Hito 2 | 2018-01-08 09:00 → 2018-01-26 09:00 (+18d) | 2018-01-08 16:02 → 2018-01-26 19:00 (+18d) | 0.63d → 1d |  | 79.87d → 88d | none → 160, 162, 165, 166, 169, 164, 167, 168 | constraint none → start no earlier than 2018-01-26 09:00; resources none → Laura [21%]; Luis [21%]; Pablo [21%] |
