# ProyectoABP

How a schedule from MS Project changed from version to version. A marks actual dates.

## Version 1 (saved 2017-10-19)

Note of the change: Metido todo en una nueva carpeta

| ID | WBS | Task | Duration | Start | Finish | Predecessors | Total float | Constraint |
| --- | --- | --- | --- | --- | --- | --- | --- | --- |
| 1 | 1 | **Hito 0** | 28d | 2017-09-11 09:00 | 2017-10-18 19:00 |  |  | finish no later than 2017-10-18 19:00 |
| 2 |  | [PM] Rellenar documento de Concepto del proyecto | 1d | 2017-09-18 09:00 | 2017-09-18 19:00 |  | 10d | start no earlier than 2017-09-18 09:00 |
| 3 |  | [PM] Rellenar versión inicial del documento Especificación | 1d | 2017-09-19 09:00 | 2017-09-19 19:00 | 2 | 20d |  |
| 4 |  | [PM] Completar y revisar documento Especificación | 1d | 2017-09-20 09:00 | 2017-09-20 19:00 | 3 | 20d |  |
| 5 | 1.4 | **[PM] Elaborar el Presupuesto (hoja de cálculo)** | 6d | 2017-09-21 09:00 | 2017-09-28 19:00 | 2 |  |  |
| 6 |  | [PM] Rellenar del presupuesto | 3.75d | 2017-09-25 11:00 | 2017-09-28 19:00 | 8 | 8d |  |
| 7 |  | [PM] Reunirse con profesores | 2d | 2017-09-21 09:00 | 2017-09-22 19:00 | 2 | 8d |  |
| 8 |  | [PM] Rellenar documentos adicionales | 0.25d | 2017-09-25 09:00 | 2017-09-25 11:00 | 7 | 8d |  |
| 9 |  | [PM] Crear WBS del proyecto en Project | 3d | 2017-09-29 09:00 | 2017-10-03 19:00 | 5 | 8d |  |
| 10 |  | [PM] Crear plan general (Tareas y precedencias básicas) en Project | 3d | 2017-10-16 09:00 | 2017-10-18 19:00 | 9 | 0d | finish no earlier than 2017-10-18 19:00 |
| 11 |  | [TDS] Elaboración Cue Sheet inicial | 7h | 2017-10-04 09:00 | 2017-10-04 18:00 |  | 10.12d | start no earlier than 2017-10-04 09:00 |
| 12 | 2 | **Hito 1** | 53.25d? | 2017-10-19 15:00 | 2018-01-02 17:00 | 1 | 8.24d |  |
| 13 | 2.1 | **Iteración 1** | 9.5d | 2017-10-19 15:00 | 2017-11-01 19:00 | 1 | 8.24d |  |
| 14 |  | [PM] Registrar tiempos y % de realización de tareas en Project | 9.5d | 2017-10-19 15:00 | 2017-11-01 19:00 |  | 8.24d | finish no earlier than 2017-11-01 19:00 |
| 15 |  | [PD] Bocetar cartel | 0.75d | 2017-10-20 09:00 | 2017-10-20 17:00 |  | 16.49d | start no earlier than 2017-10-20 09:00 |
| 16 |  | [TAG] Instalar librería matemática (glm/glmatriz) | 0.5d | 2017-10-24 09:00 | 2017-10-24 13:00 |  | 14.74d | start no earlier than 2017-10-24 09:00 |
| 17 |  | [TAG] Instalar librería de lectura de mallas (assimp…) | 1.25d | 2017-10-24 17:00 | 2017-10-25 19:00 |  | 13.24d | finish no earlier than 2017-10-25 19:00 |
| 18 |  | [TAG] Instalar librería de entrada/salida (SFML…) | 1.25d | 2017-10-24 17:00 | 2017-10-25 19:00 |  | 13.24d | finish no earlier than 2017-10-25 19:00 |
| 19 |  | [PM] Detallar plan iteraciones del mes de Noviembre. Creación Subtareas y precedencias en Project | 19.2h | 2017-10-26 09:00 | 2017-10-30 12:12 | 10 | 8.44d | start no earlier than 2017-10-26 09:00 |
| 20 |  | [TDS] Añadir elementos sonoros a la Cue Sheet | 0.25d | 2017-10-26 09:00 | 2017-10-26 11:00 | 11 | 12.99d | start no earlier than 2017-10-26 09:00 |
| 21 |  | [PD] Bocetar logo | 0.75d | 2017-10-27 09:00 | 2017-10-27 17:00 |  | 11.49d | start no earlier than 2017-10-27 09:00 |
| 22 |  | [PM] Detallar plan iteraciones del mes de Noviembre. Asignar recursos a las tareas en Project | 19.2h | 2017-10-30 15:48 | 2017-11-01 19:00 | 19 | 8.24d | finish no earlier than 2017-11-01 19:00 |
| 23 |  | Objetivo iteración 1 | 0d | 2017-11-01 19:00 | 2017-11-01 19:00 | 19, 22, 15, 21 | 8.24d |  |
| 24 | 2.2 | **Iteración 2** | 10d | 2017-11-02 09:00 | 2017-11-15 19:00 | 13 |  |  |
| 25 |  | [PM] Registrar tiempos y % de realización de tareas en Project | 0.45d | 2017-11-02 09:00 | 2017-11-02 12:36 |  | 10.92d |  |
| 26 |  | [V1] Documento de diseño de mecánicas de los NPCs | 1.25d | 2017-11-02 09:00 | 2017-11-03 11:00 |  | 10.12d |  |
| 27 |  | [V1] Documento de diseño de toma de decisión: espacio y métodos | 1.88d | 2017-11-02 09:00 | 2017-11-03 18:02 |  | 9.49d |  |
| 28 |  | [V1] Documento de diseño técnico del motor de IA | 1.88d | 2017-11-02 09:00 | 2017-11-03 18:02 |  | 9.49d |  |
| 29 |  | [V1] Diseño de requerimientos y funciones de red | 1.25d | 2017-11-02 09:00 | 2017-11-03 11:00 |  | 10.12d |  |
| 30 |  | [V1] Diseño técnico del motor de red | 1.88d | 2017-11-02 09:00 | 2017-11-03 18:02 |  | 9.49d |  |
| 31 |  | [RV] Boceto de los personajes | 1d | 2017-11-02 09:00 | 2017-11-02 19:00 |  | 10.37d |  |
| 32 |  | [V2] Control del player por motor de físicas 2D, dynamic o kinematic | 3.13d | 2017-11-02 09:00 | 2017-11-07 10:02 |  | 8.24d |  |
| 33 |  | Objetivo iteración 2 | 0d | 2017-11-07 10:02 | 2017-11-07 10:02 | 25, 26, 27, 28, 29, 30, 31, 32 | 8.24d |  |
| 34 | 2.3 | **Iteración 3** | 10d | 2017-11-16 09:00 | 2017-11-29 19:00 | 24 |  |  |
| 35 |  | [PM] Detallar plan iteraciones del mes de Diciembre. Creación Subtareas y precedencias en Project | 2.4d | 2017-11-16 09:00 | 2017-11-20 12:12 | 22 | 10.32d |  |
| 36 |  | [PM] Detallar plan iteraciones del mes de Diciembre. Asignar recursos a las tareas en Project | 2.4d | 2017-11-20 12:12 | 2017-11-22 17:24 | 35 | 10.32d |  |
| 37 |  | [PM] Registrar tiempos y % de realización de tareas en Project | 0.45d | 2017-11-16 09:00 | 2017-11-16 12:36 | 25 | 14.67d |  |
| 38 |  | [PM] Rellenar documento Gestión de riesgos | 2.4d | 2017-11-16 09:00 | 2017-11-20 12:12 |  | 12.72d |  |
| 39 |  | [V1] Sistema de toma de decisión con Lógica Difusa | 6.25d | 2017-11-16 09:00 | 2017-11-24 11:00 |  | 1.37d |  |
| 40 |  | [V1] Sistema de Waypoints para pathfinding continuo | 7.5d | 2017-11-24 11:00 | 2017-12-05 17:00 | 39 | 1.37d |  |
| 41 |  | [V2] Mecánicas de acción | 1.88d | 2017-11-16 09:00 | 2017-11-17 18:02 |  | 13.24d |  |
| 42 |  | [V2] Formato propio para la definición de los niveles (documento con la especificación del formato) | 1.25d | 2017-11-16 09:00 | 2017-11-17 11:00 |  | 13.87d |  |
| 43 |  | [RV] Bocetos de los elementos | 1d | 2017-11-16 09:00 | 2017-11-16 19:00 |  | 14.12d |  |
| 44 |  | Objetivo iteración 3 | 0d | 2017-12-05 17:00 | 2017-12-05 17:00 | 35, 36, 37, 38, 39, 40, 41, 42, 43 | 1.37d |  |
| 45 | 2.4 | **Iteración 4** | 10d | 2017-11-30 09:00 | 2017-12-13 19:00 | 34 |  |  |
| 46 |  | [PM] Registrar tiempos y % de realización de tareas en Project | 0.45d | 2017-11-30 09:00 | 2017-11-30 12:36 | 37 | 17.8d |  |
| 47 |  | [V1] Sistema de gestión de eventos (Trigger System/Event Manager) | 6.88d | 2017-11-30 09:00 | 2017-12-08 18:02 |  | 5.12d |  |
| 48 |  | [V1] Sistema de percepción sensorial (vista, oído, olfato, canales…) | 6.25d | 2017-12-08 18:02 | 2017-12-19 10:02 | 47 | 5.12d |  |
| 49 |  | [V2] Utilización de propiedades físicas en las mecánicas jugables | 1.88d | 2017-11-30 09:00 | 2017-12-01 18:02 |  | 16.37d |  |
| 50 |  | [V2] Implementación de cámara de seguimiento | 1.88d | 2017-11-30 09:00 | 2017-12-01 18:02 |  | 16.37d |  |
| 51 |  | [RV] Bocetos del entorno | 1d | 2017-11-30 09:00 | 2017-11-30 19:00 |  | 17.25d |  |
| 52 |  | Objetivo iteración 4 | 0d | 2017-12-19 10:02 | 2017-12-19 10:02 | 46, 47, 48, 49, 50, 51 | 5.12d |  |
| 53 | 2.5 | **Iteración 5** | 7d | 2017-12-14 09:00 | 2017-12-22 19:00 | 45 |  |  |
| 54 |  | [PM] Registrar tiempos y % de realización de tareas en Project | 0.45d | 2017-12-14 09:00 | 2017-12-14 12:36 | 46 | 21.55d |  |
| 55 |  | [PM] Comparar la planificación prevista y real en Project hito 1 | 2.25d | 2017-12-14 09:00 | 2017-12-18 11:00 |  | 14.5d |  |
| 56 |  | [PM] Aplicar el modelo EVA en Project | 2.25d | 2017-12-14 09:00 | 2017-12-18 11:00 |  | 19.75d |  |
| 57 |  | [PM] Confeccionar Informes de iteración e informe resumen de Hito 1 | 2.25d | 2017-12-18 11:00 | 2017-12-20 13:00 | 55 | 14.5d |  |
| 58 |  | [PM] Elaborar la presentación del Hito 1 | 1.5d | 2017-12-20 15:00 | 2017-12-21 19:00 | 57 | 14.5d |  |
| 59 |  | [PM] Exponer la presentación del Hito 1 | 1.5d | 2017-12-22 09:00 | 2017-12-25 13:00 | 58 | 14.5d |  |
| 60 |  | [V1] Sistema de toma de decisión con Behaviour Trees | 4.38d | 2017-12-14 09:00 | 2017-12-20 12:02 |  | 17.62d |  |
| 61 |  | [V2] Diseño e implementación de la arquitectura basada en componentes (diagrama de clases e implementación) | 11.25d | 2017-12-14 09:00 | 2017-12-29 11:00 |  | 8.25d |  |
| 62 |  | [V2] Mecánicas básicas entidades sin IA | 2.5d | 2017-12-29 11:00 | 2018-01-02 17:00 | 61 | 8.25d |  |
| 63 |  | [TDS] Síntesis | 3.75d | 2017-12-15 18:02 | 2017-12-21 16:02 | 67 | 12.62d |  |
| 64 |  | [TDS] Grabaciones propias | 3.75d | 2017-12-15 18:02 | 2017-12-21 16:02 | 67 | 16.37d |  |
| 65 |  | [TDS] Sonidos externos | 3.75d | 2017-12-15 18:02 | 2017-12-21 16:02 | 67 | 16.37d |  |
| 66 |  | [TDS] Música | 3.75d | 2017-12-21 16:02 | 2017-12-27 12:02 | 63 | 12.62d |  |
| 67 |  | [TDS] Cue Sheet | 1.88d | 2017-12-14 09:00 | 2017-12-15 18:02 |  | 12.62d |  |
| 68 |  | [TDS] Hoja de metadatos | 1.88d | 2017-12-14 09:00 | 2017-12-15 18:02 |  | 20.12d |  |
| 69 |  | [TDS] Integración del motor de audio en el juego con prueba de concepto | 3.75d | 2017-12-14 09:00 | 2017-12-19 17:00 |  | 18.25d |  |
| 70 |  | [PD] Vídeo con animación del logo de la empresa | 7.5d | 2017-12-14 09:00 | 2017-12-25 13:00 |  | 14.5d |  |

| ID | WBS | Task | Duration | Start | Finish | Predecessors | Total float |
| --- | --- | --- | --- | --- | --- | --- | --- |
| 71 |  | Objetivo iteración 5 | 0d | 2018-01-02 17:00 | 2018-01-02 17:00 | 54, 55, 56, 57, 58, 59, 60, 61, 62, 63, 64, 65, 66, 67, 68, 69, 70 | 8.25d |
| 72 | 3 | **Hito 2** | 16d | 2018-01-07 09:00 | 2018-01-26 19:00 | 12 |  |
| 73 |  | [PM] Revisar especificación proyecto | 3d | 2018-01-08 09:00 | 2018-01-10 19:00 |  | 77.5d |
| 74 |  | [PM] Reestimar proyecto | 3d | 2018-01-08 09:00 | 2018-01-10 19:00 |  | 77.5d |
| 75 |  | [PM] Detallar plan iteraciones del mes de Enero. Creación Subtareas y precedencias en Project | 1d | 2018-01-08 09:00 | 2018-01-08 19:00 |  | 79.5d |
| 76 |  | [PM] Detallar plan iteraciones del mes de Enero. Asignar recursos a las tareas en Project | 1d | 2018-01-08 09:00 | 2018-01-08 19:00 |  | 79.5d |
| 77 |  | [PM] Registrar tiempos y % de realización de tareas en Project | 0.63d | 2018-01-08 09:00 | 2018-01-08 16:02 |  | 79.87d |
| 78 |  | [PM] Comparar la planificación prevista y real en Project hito 2 | 0.63d | 2018-01-08 09:00 | 2018-01-08 16:02 |  | 79.87d |
| 79 |  | [PM] Confeccionar Informes de iteración e informe resumen de Hito 2 | 0.63d | 2018-01-08 09:00 | 2018-01-08 16:02 |  | 79.87d |
| 80 |  | [V1] Sistema de depuración visual in-game de la IA | 3.75d | 2018-01-08 09:00 | 2018-01-11 17:00 |  | 76.75d |
| 81 |  | [V1] Multijugador en tiempo real | 11.25d | 2018-01-08 09:00 | 2018-01-23 11:00 |  | 69.25d |
| 82 |  | [V2] Power-ups y elementos adicionales | 5d | 2018-01-08 09:00 | 2018-01-12 19:00 |  | 75.5d |
| 83 |  | [V2] Creación de un cargador de niveles | 3.13d | 2018-01-08 09:00 | 2018-01-11 10:02 |  | 77.37d |
| 84 |  | [V2] Gestión de colisiones de la cámara (sistema de depuración para ver colisiones) | 1.88d | 2018-01-08 09:00 | 2018-01-09 18:02 |  | 78.62d |
| 85 |  | [V2] Integración de librería para GUI | 0.63d | 2018-01-08 09:00 | 2018-01-08 16:02 |  | 79.87d |
| 86 | 4 | **Hito 3** | 35d | 2018-02-07 09:00 | 2018-03-27 19:00 | 72 |  |
| 87 |  | [PM] Detallar plan iteraciones del mes de Febrero-Marzo. Creación Subtareas y precedencias en Project | 1d | 2018-02-07 09:00 | 2018-02-07 19:00 |  | 68.75d |
| 88 |  | [PM] Detallar plan iteraciones del mes de Febrero-Marzo Asignar recursos a las tareas en Project | 1d | 2018-02-07 09:00 | 2018-02-07 19:00 |  | 68.75d |
| 89 |  | [PM] Registrar tiempos y % de realización de tareas en Project | 0.63d | 2018-02-07 09:00 | 2018-02-07 16:02 |  | 69.12d |
| 90 |  | [PM] Comparar la planificación prevista y real en Project hito 3 | 0.63d | 2018-02-07 09:00 | 2018-02-07 16:02 |  | 69.12d |
| 91 |  | [PM] Confeccionar Informes de iteración e informe resumen de Hito 3 | 0.63d | 2018-02-07 09:00 | 2018-02-07 16:02 |  | 69.12d |
| 92 |  | [PM] Elaborar la presentación del Hito 3 | 0.75d | 2018-02-07 09:00 | 2018-02-07 17:00 |  | 69d |
| 93 |  | [PM] Exponer la presentación del Hito 3 | 0.75d | 2018-02-07 09:00 | 2018-02-07 17:00 |  | 69d |
| 94 |  | [TAG] Estructura básica del nodo (array de hijos, puntero a padre, puntero a entidad, funcionalidad básica -constructor, destructor, gets, sets, manejo de hijos….) | 0.5d | 2018-02-07 09:00 | 2018-02-07 13:00 |  | 69.25d |
| 95 |  | [TAG] Recorrido-dibujado del árbol | 0.5d | 2018-02-07 09:00 | 2018-02-07 13:00 |  | 69.25d |
| 96 |  | [TAG] Estructura básica de la entidad (Constructor, destructor, funciones… todas virtuales, vacías) | 0.5d | 2018-02-07 09:00 | 2018-02-07 13:00 |  | 69.25d |
| 97 |  | [TAG] Matrices (model, view, projection) y pila estáticas y su manejo | 0.63d | 2018-02-07 09:00 | 2018-02-07 16:02 |  | 69.12d |
| 98 |  | [TAG] Estructura básica de la transformación (Constructor, destructor, matriz transformación…) | 0.5d | 2018-02-07 09:00 | 2018-02-07 13:00 |  | 69.25d |
| 99 |  | [TAG] Operaciones de transformación (trasladar, rotar, escalar, identidad, trasponer, invertir, todas con GLM) | 0.75d | 2018-02-07 09:00 | 2018-02-07 17:00 |  | 69d |
| 100 |  | [TAG] Dibujado (begindraw, enddraw, manejo pila y matriz model) | 0.75d | 2018-02-07 09:00 | 2018-02-07 17:00 |  | 69d |
| 101 |  | [TAG] Estructura básica de la cámara (Constructor, destructor, matriz proyección) | 0.38d | 2018-02-07 09:00 | 2018-02-07 12:02 |  | 69.37d |
| 102 |  | [TAG] Rellenar matriz perspectiva (con glm) | 0.25d | 2018-02-07 09:00 | 2018-02-07 11:00 |  | 69.5d |
| 103 |  | [TAG] Estructura básica de la luz (Constructor, destructor) | 0.38d | 2018-02-07 09:00 | 2018-02-07 12:02 |  | 69.37d |
| 104 |  | [TAG] Datos y funciones luz puntual | 0.38d | 2018-02-07 09:00 | 2018-02-07 12:02 |  | 69.37d |
| 105 |  | [TAG] Estructura básica de la malla (Constructor, destructor) | 0.38d | 2018-02-07 09:00 | 2018-02-07 12:02 |  | 69.37d |
| 106 |  | [TAG] Datos de mallas, texturas, materiales… (llamadas al gestor de recursos) | 0.5d | 2018-02-07 09:00 | 2018-02-07 13:00 |  | 69.25d |
| 107 |  | [TAG] Dibujado (begindraw, enddraw, matriz model…) | 0.63d | 2018-02-07 09:00 | 2018-02-07 16:02 |  | 69.12d |
| 108 |  | [TAG] Estructura básica del gestor de recursos (constructor, destructor, vectores de recursos) | 0.5d | 2018-02-07 09:00 | 2018-02-07 13:00 |  | 69.25d |
| 109 |  | [TAG] Obtener recurso (gestión adecuada de memoria) | 0.75d | 2018-02-07 09:00 | 2018-02-07 17:00 |  | 69d |
| 110 |  | [TAG] Estructura básica del recurso (constructor, destructor. Es virtual, vacío) | 0.38d | 2018-02-07 09:00 | 2018-02-07 12:02 |  | 69.37d |
| 111 |  | [TAG] Estructura básica de la malla (constructor, destructor) | 0.5d | 2018-02-07 09:00 | 2018-02-07 13:00 |  | 69.25d |
| 112 |  | [TAG] Lectura de disco (con assimp) | 0.75d | 2018-02-07 09:00 | 2018-02-07 17:00 |  | 69d |
| 113 |  | [TAG] Creación de buffers de vértices, normales, índices… y relleno | 1d | 2018-02-07 09:00 | 2018-02-07 19:00 |  | 68.75d |
| 114 |  | [TAG] Dibujado de las mallas (draw, con paso de los buffers a OpenGL) | 1d | 2018-02-07 09:00 | 2018-02-07 19:00 |  | 68.75d |
| 115 |  | [TAG] Estructura básica de la textura (constructor, destructor) | 0.25d | 2018-02-07 09:00 | 2018-02-07 11:00 |  | 69.5d |
| 116 |  | [TAG] Leer de disco (con librería) y rellenar buffers | 0.75d | 2018-02-07 09:00 | 2018-02-07 17:00 |  | 69d |
| 117 |  | [TAG] Dibujado (preparar las texturas y cargarlas en OpenGL) | 1d | 2018-02-07 09:00 | 2018-02-07 19:00 |  | 68.75d |
| 118 |  | [TAG] Estructura básica del material (constructor, destructor) | 0.25d | 2018-02-07 09:00 | 2018-02-07 11:00 |  | 69.5d |
| 119 |  | [TAG] Leer de disco (con librería o con parser propio) y rellenar valores | 0.63d | 2018-02-07 09:00 | 2018-02-07 16:02 |  | 69.12d |
| 120 |  | [TAG] Dibujado (preparar los materiales y cargarlos en OpenGL) | 0.5d | 2018-02-07 09:00 | 2018-02-07 13:00 |  | 69.25d |
| 121 |  | [TAG] Estructura básica del shader (constructor, destructor) | 0.5d | 2018-02-07 09:00 | 2018-02-07 13:00 |  | 69.25d |
| 122 |  | [TAG] Lectura de disco (con parser propio) y guardarlo | 0.88d | 2018-02-07 09:00 | 2018-02-07 18:02 |  | 68.87d |
| 123 |  | [TAG] Estructura básica de la fachada (constructor, destructor, inicialización motor y openGL) | 0.75d | 2018-02-07 09:00 | 2018-02-07 17:00 |  | 69d |
| 124 |  | [TAG] Funciones para crear cámaras y gestionarlas (manejo de las cámaras, registro, cálculo de la matriz view) | 1.25d | 2018-02-07 09:00 | 2018-02-08 11:00 |  | 68.5d |
| 125 |  | [TAG] Funciones para crear luces y gestionarlas (manejo de las luces registro, cálculo de la matriz light) | 0.75d | 2018-02-07 09:00 | 2018-02-07 17:00 |  | 69d |
| 126 |  | [TAG] Funciones para crear transformaciones (creación de varios nodos con las transformaciones, manejo de las transformaciones) | 0.75d | 2018-02-07 09:00 | 2018-02-07 17:00 |  | 69d |
| 127 |  | [TAG] Funciones para crear mallas y animaciones | 0.75d | 2018-02-07 09:00 | 2018-02-07 17:00 |  | 69d |
| 128 |  | [TAG] Funciones para crear shaders y gestionarlos | 0.75d | 2018-02-07 09:00 | 2018-02-07 17:00 |  | 69d |
| 129 |  | [TAG] Shader básico (Sombreado de Phong, reflexión de Phong) con materiales | 0.63d | 2018-02-07 09:00 | 2018-02-07 16:02 |  | 69.12d |
| 130 |  | [TAG] Integración con la aplicación | 3.75d | 2018-02-07 09:00 | 2018-02-12 17:00 |  | 66d |
| 131 |  | [TAG] Realización de una fachada genérica | 1.88d | 2018-02-07 09:00 | 2018-02-08 18:02 |  | 67.87d |
| 132 |  | [V1] Gestión de recursos de IA con Level-of-Detail (LoD) | 6.25d | 2018-02-07 09:00 | 2018-02-15 11:00 |  | 63.5d |
| 133 |  | [V1] Sistema de predicción de movimiento multijugador en tiempo real | 3.75d | 2018-02-07 09:00 | 2018-02-12 17:00 |  | 66d |
| 134 |  | [V1] Sistema de depuración visual del motor de Red | 3.75d | 2018-02-07 09:00 | 2018-02-12 17:00 |  | 66d |
| 135 |  | [V2] Diseño y creación de niveles | 5d | 2018-02-07 09:00 | 2018-02-13 19:00 |  | 64.75d |
| 136 |  | [V2] Implementación de menús | 3.75d | 2018-02-07 09:00 | 2018-02-12 17:00 |  | 66d |
| 137 |  | [V2] Implementación del HUD | 2.5d | 2018-02-07 09:00 | 2018-02-09 13:00 |  | 67.25d |
| 138 |  | [V2] Implementación de clipping (comparativa de FPS con/sin oclusiones) | 1.25d | 2018-02-07 09:00 | 2018-02-08 11:00 |  | 68.5d |
| 139 |  | [V2] Oclusiones mediante tecnicas de rasterización (comparativa de FPS con/sin oclusiones) | 1.25d | 2018-02-07 09:00 | 2018-02-08 11:00 |  | 68.5d |
| 140 |  | [V2] Sistema de Level-Of-Detail (LoD) para la selección de la malla gráfica de los objetos | 1.88d | 2018-02-07 09:00 | 2018-02-08 18:02 |  | 67.87d |

| ID | WBS | Task | Duration | Start | Finish | Predecessors | Total float |
| --- | --- | --- | --- | --- | --- | --- | --- |
| 141 |  | [V2] Sistema de Level-Of-Detail continuo (CLoD) para el terreno | 3.13d | 2018-02-07 09:00 | 2018-02-12 10:02 |  | 66.62d |
| 142 |  | [V2] Creación e implementación del skybox | 3.13d | 2018-02-07 09:00 | 2018-02-12 10:02 |  | 66.62d |
| 143 |  | [TDS] Resto de la biblioteca (máx. 1/3), cuesheet y metadatos finales | 7.5d | 2018-02-07 09:00 | 2018-02-16 13:00 |  | 62.25d |
| 144 |  | [PD] Cartel juego/proyecto | 3.75d | 2018-02-07 09:00 | 2018-02-12 17:00 |  | 66d |
| 145 |  | [PD] Trailer juego/proyecto | 11.25d | 2018-02-07 09:00 | 2018-02-22 11:00 |  | 58.5d |
| 146 |  | [RV] Modelado de los personajes | 7.5d | 2018-02-07 09:00 | 2018-02-16 13:00 |  | 62.25d |
| 147 |  | [RV] Texturizado de los personajes | 6d | 2018-02-07 09:00 | 2018-02-14 19:00 |  | 63.75d |
| 148 |  | [RV] Modelado del entorno y elementos | 11d | 2018-02-07 09:00 | 2018-02-21 19:00 |  | 58.75d |
| 149 | 5 | **Hito 4** | 46d | 2018-03-28 09:00 | 2018-05-30 19:00 | 86 |  |
| 150 |  | [PM] Detallar plan iteraciones del mes de Abril-Mayo. Creación Subtareas y precedencias en Project | 1d | 2018-03-28 09:00 | 2018-03-28 19:00 |  | 45d |
| 151 |  | [PM] Detallar plan iteraciones del mes de Abril-Mayo. Asignar recursos a las tareas en Project | 1d | 2018-03-28 09:00 | 2018-03-28 19:00 |  | 45d |
| 152 |  | [PM] Registrar tiempos y % de realización de tareas en Project | 0.63d | 2018-03-28 09:00 | 2018-03-28 16:02 |  | 45.37d |
| 153 |  | [PM] Comparar la planificación prevista y real en Project hito 4 | 0.63d | 2018-03-28 09:00 | 2018-03-28 16:02 |  | 45.37d |
| 154 |  | [PM] Confeccionar Informes de iteración e informe resumen de Hito 4 | 0.63d | 2018-03-28 09:00 | 2018-03-28 16:02 |  | 45.37d |
| 155 |  | [PM] Elaborar la presentación del Hito 4 | 0.75d | 2018-03-28 09:00 | 2018-03-28 17:00 |  | 45.25d |
| 156 |  | [PM] Exponer la presentación del Hito 4 | 0.75d | 2018-03-28 09:00 | 2018-03-28 17:00 |  | 45.25d |
| 157 |  | [TAG] Datos y funciones luz dirigida | 0.63d | 2018-03-28 09:00 | 2018-03-28 16:02 |  | 45.37d |
| 158 |  | [TAG] Otros tipos de luces | 11.25d | 2018-03-28 09:00 | 2018-04-12 11:00 |  | 34.75d |
| 159 |  | [TAG] Estructura básica de la animación (Constructor, destructor) | 0.5d | 2018-03-28 09:00 | 2018-03-28 13:00 |  | 45.5d |
| 160 |  | [TAG] Datos de animaciones, mallas, texturas, materiales (multiples, con llamadas al gestor de recursos) | 0.63d | 2018-03-28 09:00 | 2018-03-28 16:02 |  | 45.37d |
| 161 |  | [TAG] Getión temporal de las animaciones (frames…) | 0.75d | 2018-03-28 09:00 | 2018-03-28 17:00 |  | 45.25d |
| 162 |  | [TAG] Dibujado (begindraw, enddraw, matriz model…) | 0.75d | 2018-03-28 09:00 | 2018-03-28 17:00 |  | 45.25d |
| 163 |  | [TAG] Shader Cartoon | 1.88d | 2018-03-28 09:00 | 2018-03-29 18:02 |  | 44.12d |
| 164 |  | [TAG] Shader light mapping | 1.88d | 2018-03-28 09:00 | 2018-03-29 18:02 |  | 44.12d |
| 165 |  | [TAG] Shader Deferred Shading | 2.75d | 2018-03-28 09:00 | 2018-03-30 17:00 |  | 43.25d |
| 166 |  | [TAG] Bounding boxes (incluye retocar nodos, entidades y recursos malla) | 1.5d | 2018-03-28 09:00 | 2018-03-29 13:00 |  | 44.5d |
| 167 |  | [TAG] Backface culling | 0.5d | 2018-03-28 09:00 | 2018-03-28 13:00 |  | 45.5d |
| 168 |  | [TAG] Frustum culling | 2.5d | 2018-03-28 09:00 | 2018-03-30 13:00 |  | 43.5d |
| 169 |  | [TAG] Shadow mapping | 3.13d | 2018-03-28 09:00 | 2018-04-02 10:02 |  | 42.87d |
| 170 |  | [TAG] Sombras volumétricas | 4.38d | 2018-03-28 09:00 | 2018-04-03 12:02 |  | 41.62d |
| 171 |  | [TAG] Sistema de partículas (sólo la incorporación en el motor) | 3.13d | 2018-03-28 09:00 | 2018-04-02 10:02 |  | 42.87d |
| 172 |  | [TAG] Billboards (sólo la parte de visualización) | 1.25d | 2018-03-28 09:00 | 2018-03-29 11:00 |  | 44.75d |
| 173 |  | [TAG] Skybox (sólo la incorporación en el motor) | 0.63d | 2018-03-28 09:00 | 2018-03-28 16:02 |  | 45.37d |
| 174 |  | [TAG] Otras | 4d | 2018-03-28 09:00 | 2018-04-02 19:00 |  | 42d |
| 175 |  | [V2] Multiplataforma con soporte para Windows | 5d | 2018-03-28 09:00 | 2018-04-03 19:00 |  | 41d |
| 176 |  | [V2] Implementación de nubes | 1.88d | 2018-03-28 09:00 | 2018-03-29 18:02 |  | 44.12d |
| 177 |  | [V2] Implementación de sistemas de partículas | 1.88d | 2018-03-28 09:00 | 2018-03-29 18:02 |  | 44.12d |
| 178 |  | [TDS] Integración de sonido y música en el juego | 3.75d | 2018-03-28 09:00 | 2018-04-02 17:00 |  | 42.25d |
| 179 |  | [TDS] Post producción (mezcla y masterización in-game) | 3.75d | 2018-03-28 09:00 | 2018-04-02 17:00 |  | 42.25d |
| 180 |  | [PD] Making of juego/proyecto | 11.25d | 2018-03-28 09:00 | 2018-04-12 11:00 |  | 34.75d |
| 181 |  | [PD] Créditos | 3.75d | 2018-03-28 09:00 | 2018-04-02 17:00 |  | 42.25d |
| 182 |  | [RV] Rigging de los personajes | 1d | 2018-03-28 09:00 | 2018-03-28 19:00 |  | 45d |
| 183 |  | [RV] Captura de movimiento | 5d | 2018-03-28 09:00 | 2018-04-03 19:00 |  | 41d |
| 184 |  | [RV] Animación de los personajes | 10d | 2018-03-28 09:00 | 2018-04-10 19:00 |  | 36d |
| 185 |  | [RV] Texturizado del entorno y elementos | 6.5d | 2018-03-28 09:00 | 2018-04-05 13:00 |  | 39.5d |

## Version 2 (saved 2017-10-19)

Note of the change: Project arreglado y capturas de la linea base

Last finish stays 2018-05-30. Complete tasks 0 → 9.

Added:

| ID | Task | Duration | Start | Finish | Predecessors |
| --- | --- | --- | --- | --- | --- |
| 24 | Objetivo Iteración 1 | 0d | 2017-11-01 13:00 | 2017-11-01 13:00 | 23 |

Changed:

| ID | Task | Start | Finish | Duration | Complete | Total float | Predecessors | Other |
| --- | --- | --- | --- | --- | --- | --- | --- | --- |
| 1 | **Hito 0** |  | 2017-10-18 19:00 A |  | 0% → 100% |  |  |  |
| 2 | [PM] Rellenar documento de Concepto del proyecto | 2017-09-18 09:00 A | 2017-09-18 19:00 A |  | 0% → 100% | 10d → none |  |  |
| 3 | [PM] Rellenar versión inicial del documento Especificación | 2017-09-19 09:00 A | 2017-09-19 19:00 A |  | 0% → 100% | 20d → none |  |  |
| 4 | [PM] Completar y revisar documento Especificación | 2017-09-20 09:00 A | 2017-09-20 19:00 A |  | 0% → 100% | 20d → none |  |  |
| 5 | **[PM] Elaborar el Presupuesto (hoja de cálculo)** | 2017-09-21 09:00 A | 2017-09-28 19:00 A |  | 0% → 100% |  |  |  |
| 6 | [PM] Rellenar del presupuesto | 2017-09-25 11:00 A | 2017-09-28 19:00 A |  | 0% → 100% | 8d → none |  |  |
| 7 | [PM] Reunirse con profesores | 2017-09-21 09:00 A | 2017-09-22 19:00 A |  | 0% → 100% | 8d → none |  |  |
| 8 | [PM] Rellenar documentos adicionales | 2017-09-25 09:00 A | 2017-09-25 11:00 A |  | 0% → 100% | 8d → none |  |  |
| 9 | [PM] Crear WBS del proyecto en Project | 2017-09-29 09:00 A | 2017-10-03 19:00 A |  | 0% → 100% | 8d → none | 5 → 5, 6, 7, 8 |  |
| 10 | [PM] Crear plan general (Tareas y precedencias básicas) en Project | 2017-10-16 09:00 A | 2017-10-18 19:00 A |  | 0% → 100% | 0d → none |  |  |
| 11 | [TDS] Elaboración Cue Sheet inicial | 2017-10-04 09:00 A | 2017-10-04 18:00 A |  | 0% → 100% | 10.12d → none |  |  |
| 13 | **Iteración 1** |  | 2017-11-01 19:00 → 2017-11-01 13:00 | 9.5d → 9d |  | 8.24d → 8.74d |  | baseline start none → 2017-10-19 15:00; baseline finish none → 2017-11-01 13:00 |
| 14 | [PM] Registrar tiempos y % de realización de tareas en Project |  | 2017-11-01 19:00 → 2017-10-31 19:00 (-1d) | 9.5d → 8.5d |  | 8.24d → 9.24d |  | constraint finish no earlier than 2017-11-01 19:00 → finish no earlier than 2017-10-31 19:00; baseline start none → 2017-10-19 15:00; baseline finish none → 2017-10-31 19:00 |
| 15 | [PD] Bocetar cartel |  |  |  |  | 16.49d → 15.99d |  | baseline start none → 2017-10-20 09:00; baseline finish none → 2017-10-20 17:00 |
| 16 | [TAG] Instalar librería matemática (glm/glmatriz) |  |  |  |  |  |  | baseline start none → 2017-10-24 09:00; baseline finish none → 2017-10-24 13:00 |
| 17 | [TAG] Instalar librería de lectura de mallas (assimp…) |  |  |  |  |  |  | baseline start none → 2017-10-24 17:00; baseline finish none → 2017-10-25 19:00 |
| 18 | [TAG] Instalar librería de entrada/salida (SFML…) |  |  |  |  |  |  | baseline start none → 2017-10-24 17:00; baseline finish none → 2017-10-25 19:00 |
| 19 | [PM] Detallar plan iteraciones del mes de Noviembre. Creación Subtareas y precedencias en Project | 2017-10-26 09:00 → 2017-10-24 09:00 (-2d) | 2017-10-30 12:12 → 2017-10-26 12:12 (-4d) | 19.2h → 2.4d |  | 8.44d → 9.94d |  | constraint start no earlier than 2017-10-26 09:00 → start no earlier than 2017-10-24 09:00; baseline start none → 2017-10-24 09:00; baseline finish none → 2017-10-26 12:12 |
| 20 | [TDS] Añadir elementos sonoros a la Cue Sheet |  |  |  |  |  |  | baseline start none → 2017-10-26 09:00; baseline finish none → 2017-10-26 11:00 |
| 21 | [PD] Bocetar logo |  |  |  |  | 11.49d → 10.99d |  | baseline start none → 2017-10-27 09:00; baseline finish none → 2017-10-27 17:00 |
| 22 | [PM] Detallar plan iteraciones del mes de Noviembre. Asignar recursos a las tareas en Project | 2017-10-30 15:48 → 2017-10-27 09:00 (-3d) | 2017-11-01 19:00 → 2017-10-31 12:12 (-1d) | 19.2h → 2.4d |  | 8.24d → 9.34d |  | constraint finish no earlier than 2017-11-01 19:00 → start no earlier than 2017-10-27 09:00; baseline start none → 2017-10-27 09:00; baseline finish none → 2017-10-31 12:12 |
| 23 | [PM] Realizar informe iteración 1 | 2017-11-01 19:00 → 2017-11-01 09:00 | 2017-11-01 19:00 → 2017-11-01 13:00 | 0d → 0.5d |  | 8.24d → 8.74d |  | was named Objetivo iteración 1; constraint none → start no earlier than 2017-11-01 09:00; baseline start none → 2017-11-01 09:00; baseline finish none → 2017-11-01 13:00 |

## Version 3 (saved 2017-11-01)

Note of the change: Project actualizado para la iteración1

Last finish stays 2018-05-30. Complete tasks 9 → 8.

Added:

| ID | Task | Duration | Start | Finish | Predecessors | Constraint | Resources |
| --- | --- | --- | --- | --- | --- | --- | --- |
| 29 | [V1] Iniciar el documento de diseño técnico del motor de IA | 0.94d | 2017-11-03 09:28 | 2017-11-03 19:00 |  | finish no earlier than 2017-11-03 19:00 | Adrián [24%]; Alexei [24%]; Laura [24%]; Luis [24%]; Pablo [24%] |
| 31 | [PM] Detallar plan iteraciones del mes de Noviembre. Asignar recursos a las tareas en Project (2/2) | 1.2d | 2017-11-03 10:36 | 2017-11-06 12:12 | 30 |  | Adrián [21%]; Alexei [21%]; Laura [5%]; Luis [5%]; Pablo [5%] |
| 33 | [V2] Instalación irrLicht | 0.5d | 2017-11-07 15:00 | 2017-11-07 19:00 |  | finish no earlier than 2017-11-07 19:00 | Adrián [9%]; Alexei [9%]; Laura [9%]; Luis [9%]; Pablo [9%] |
| 41 | [V1] Acabar el documento de diseño de mecánicas de los NPCs | 0.5d | 2017-11-02 09:00 | 2017-11-02 13:00 |  | start no earlier than 2017-11-02 09:00 |  |
| 42 | [V1] Acabar el documento de diseño de toma de decisión: espacio y métodos | 0.94d | 2017-11-02 09:00 | 2017-11-02 18:31 |  | start no earlier than 2017-11-02 09:00 |  |
| 43 | [V1] Acabar el documento de diseño técnico del motor de IA | 0.94d | 2017-11-03 09:00 | 2017-11-03 18:31 |  | start no earlier than 2017-11-03 09:00 |  |
| 52 | [PM] Detallar plan iteraciones del mes de Diciembre. Asignar recursos a las tareas en Project (2/2) | 1.2d | 2017-11-21 17:24 | 2017-11-22 19:00 | 37 | finish no earlier than 2017-11-22 19:00 |  |

Changed:

| ID | Task | Start | Finish | Duration | Complete | Total float | Predecessors | Other |
| --- | --- | --- | --- | --- | --- | --- | --- | --- |
| 1 | **Hito 0** |  | 2017-10-18 19:00 A → 2017-10-18 19:00 |  | 100% → 99% |  |  |  |
| 11 | [TDS] Elaboración Cue Sheet inicial |  | 2017-10-04 18:00 A → 2017-10-04 18:02 | 7h → 0.88d | 100% → 99% | none → 10.12d |  |  |
| 13 | **Iteración 1** |  | 2017-11-01 13:00 → 2017-11-01 17:00 | 9d → 9.25d |  | 8.74d → 7.8d |  |  |
| 14 | [PM] Registrar tiempos y % de realización de tareas en Project (1/5) |  |  |  |  | 9.24d → 8.55d |  | was named [PM] Registrar tiempos y % de realización de tareas en Project |
| 19 | [PM] Detallar plan iteraciones del mes de Noviembre. Creación Subtareas y precedencias en Project (1/2) |  | 2017-10-26 12:12 → 2017-10-25 10:36 (-1d) | 2.4d → 1.2d |  | 9.94d → 11.4d |  | was named [PM] Detallar plan iteraciones del mes de Noviembre. Creación Subtareas y precedencias en Project |
| 22 | [PM] Detallar plan iteraciones del mes de Noviembre. Asignar recursos a las tareas en Project (1/2) |  | 2017-10-31 12:12 → 2017-10-30 10:36 (-1d) | 2.4d → 1.2d |  | 9.34d → 9.6d |  | was named [PM] Detallar plan iteraciones del mes de Noviembre. Asignar recursos a las tareas en Project |
| 23 | [PM] Realizar informe iteración 1 |  | 2017-11-01 13:00 → 2017-11-01 17:00 | 0.5d → 0.75d |  | 8.74d → 7.8d |  | resources none → Laura [25%]; Luis [25%]; Pablo [25%] |
| 24 | Objetivo Iteración 1 | 2017-11-01 13:00 → 2017-11-01 17:00 | 2017-11-01 13:00 → 2017-11-01 17:00 |  |  | 8.74d → 7.8d |  |  |
| 26 | [PM] Registrar tiempos y % de realización de tareas en Project (2/5) | 2017-11-02 09:00 → 2017-11-01 15:00 (-1d) | 2017-11-02 12:36 → 2017-11-14 19:00 (+12d) | 0.45d → 9.5d |  | 10.92d → 8.05d | none → 14 | was named [PM] Registrar tiempos y % de realización de tareas en Project; constraint none → finish no earlier than 2017-11-14 19:00; resources none → Adrián [1%]; Alexei [1%]; Laura [1%]; Luis [1%]; Pablo [1%] |
| 27 | [V1] Iniciar el documento de diseño de mecánicas de los NPCs |  | 2017-11-03 11:00 → 2017-11-02 13:00 (-1d) | 1.25d → 0.5d |  | 10.12d → 13.42d |  | was named [V1] Documento de diseño de mecánicas de los NPCs; resources none → Adrián [13%]; Alexei [13%]; Laura [13%]; Luis [13%]; Pablo [13%] |
| 28 | [V1] Iniciar el documento de diseño de toma de decisión: espacio y métodos |  | 2017-11-03 18:02 → 2017-11-02 18:31 (-1d) | 1.88d → 0.94d |  | 9.49d → 12.98d |  | was named [V1] Documento de diseño de toma de decisión: espacio y métodos; resources none → Adrián [24%]; Alexei [24%]; Laura [24%]; Luis [24%]; Pablo [24%] |
| 30 | [PM] Detallar plan iteraciones del mes de Noviembre. Creación Subtareas y precedencias en Project (2/2) |  | 2017-11-03 18:02 → 2017-11-03 10:36 | 1.88d → 1.2d |  | 9.49d → 14.65d | none → 19, 22 | was named [V1] Documento de diseño técnico del motor de IA; resources none → Adrián [21%]; Alexei [21%]; Laura [5%]; Luis [5%]; Pablo [5%] |
| 32 | [RV] Boceto de los personajes | 2017-11-02 09:00 → 2017-11-03 09:00 (+1d) | 2017-11-02 19:00 → 2017-11-03 19:00 (+1d) |  |  | 10.37d → 15.05d |  | constraint none → start no earlier than 2017-11-03 09:00; resources none → Alexei [25%]; Laura [25%]; Luis [25%]; Adrián [13%]; Pablo [13%] |
| 34 | [V2] Control del player por motor de físicas 2D, dynamic o kinematic | 2017-11-02 09:00 → 2017-11-08 09:00 (+6d) | 2017-11-07 10:02 → 2017-11-13 10:02 (+6d) |  |  | 8.24d → 9.92d | none → 27, 28, 33 |  |
| 35 | Objetivo iteración 2 | 2017-11-07 10:02 → 2017-11-14 19:00 (+7d) | 2017-11-07 10:02 → 2017-11-14 19:00 (+7d) |  |  | 8.24d → 8.05d | 26, 27, 28, 30, 66, 67, 32, 34 → 26, 27, 28, 30, 31, 32, 34 |  |
| 37 | [PM] Detallar plan iteraciones del mes de Diciembre. Creación Subtareas y precedencias en Project (1/2) |  | 2017-11-20 12:12 → 2017-11-17 10:36 (-3d) | 2.4d → 1.2d |  | 10.32d → 18.4d |  | was named [PM] Detallar plan iteraciones del mes de Diciembre. Creación Subtareas y precedencias en Project |
| 38 | [PM] Detallar plan iteraciones del mes de Diciembre. Asignar recursos a las tareas en Project (1/2) | 2017-11-20 12:12 → 2017-11-17 10:36 (-3d) | 2017-11-22 17:24 → 2017-11-20 12:12 (-2d) | 2.4d → 1.2d |  | 10.32d → 18.4d |  | was named [PM] Detallar plan iteraciones del mes de Diciembre. Asignar recursos a las tareas en Project |
| 39 | [PM] Registrar tiempos y % de realización de tareas en Project (3/5) |  |  |  |  | 14.67d → 20.35d |  | was named [PM] Registrar tiempos y % de realización de tareas en Project |
| 51 | [PM] Detallar plan iteraciones del mes de Diciembre. Creación Subtareas y precedencias en Project (2/2) | 2017-11-30 09:00 → 2017-11-17 17:24 (-13d) | 2017-11-30 12:36 → 2017-11-20 19:00 (-10d) | 0.45d → 1.2d |  | 17.8d → 25.25d | 39 → 22 | was named [PM] Registrar tiempos y % de realización de tareas en Project; constraint none → finish no earlier than 2017-11-20 19:00 |
| 53 | [V1] Sistema de gestión de eventos (Trigger System/Event Manager) | 2017-11-30 09:00 → 2017-11-30 09:57 | 2017-12-08 18:02 → 2017-12-08 19:00 |  |  | 5.12d → 123d |  | constraint none → finish no earlier than 2017-12-08 19:00 |
| 54 | [V1] Sistema de percepción sensorial (vista, oído, olfato, canales…) | 2017-12-08 18:02 → 2017-11-30 09:00 (-8d) | 2017-12-19 10:02 → 2017-12-08 11:00 (-11d) |  |  | 5.12d → 12d | 53 → 52 |  |
| 58 | Objetivo iteración 4 | 2017-12-19 10:02 → 2017-12-08 11:00 (-11d) | 2017-12-19 10:02 → 2017-12-08 11:00 (-11d) |  |  | 5.12d → 12d | 51, 53, 54, 55, 56, 57 → 51, 52, 54, 55, 56, 57 |  |
| 60 | [PM] Registrar tiempos y % de realización de tareas en Project (5/5) |  |  |  |  |  |  | was named [PM] Registrar tiempos y % de realización de tareas en Project |
| 66 | [V1] Diseño de requerimientos y funciones de red | 2017-11-02 09:00 → 2017-11-02 17:00 | 2017-11-03 11:00 → 2017-11-03 19:00 |  |  | 10.12d → 148d |  | constraint none → finish no earlier than 2017-11-03 19:00 |
| 67 | [V1] Diseño técnico del motor de red | 2017-11-02 09:00 → 2017-11-02 09:57 | 2017-11-03 18:02 → 2017-11-03 19:00 |  |  | 9.49d → 148d |  | constraint none → finish no earlier than 2017-11-03 19:00 |

## Version 4 (saved 2017-11-01)

Note of the change: Revert "Actualizada estructura de Docs"

Last finish stays 2018-05-30. Complete tasks 8 → 18.

Added:

| ID | Task | Duration | Start | Finish | Predecessors | Constraint | Resources |
| --- | --- | --- | --- | --- | --- | --- | --- |
| 30 | [V2] Diseño inicial de la arquitectura basada en componentes | 0.5d | 2017-11-03 09:00 | 2017-11-03 13:00 |  | start no earlier than 2017-11-03 09:00 | Adrián [50%]; Alexei [50%]; Laura [50%]; Luis [50%]; Pablo [50%] |
| 31 | [RV] Bocetar los personajes | 0.25d | 2017-11-03 09:00 | 2017-11-03 11:00 |  | start no earlier than 2017-11-03 09:00 | Alexei [25%]; Laura [25%]; Luis [25%]; Adrián [13%]; Pablo [13%] |
| 32 | [V2] Definición inicial del formato para la definición de niveles | 0.25d | 2017-11-06 09:00 | 2017-11-06 11:00 |  | start no earlier than 2017-11-06 09:00 | Adrián [25%]; Alexei [25%]; Laura [25%]; Luis [25%]; Pablo [25%] |
| 34 | [V1] Aprender y plantear inicialmente el sistema de Lógica Difusa | 3d | 2017-11-07 09:00 | 2017-11-09 19:00 | 33, 28, 29 | start no earlier than 2017-11-07 09:00 | Adrián [28%]; Alexei [28%]; Pablo [28%] |
| 35 | [V1] Aprender y plantear inicialmente el sistema de Waypoints | 3d | 2017-11-07 09:00 | 2017-11-09 19:00 | 33, 28, 29 | start no earlier than 2017-11-07 09:00 | Adrián [35%]; Alexei [35%]; Pablo [35%] |
| 37 | [TDS] Añadir sonidos externos a la biblioteca de sonido(1/4) | 0.4d | 2017-11-10 09:00 | 2017-11-10 12:12 |  | start no earlier than 2017-11-10 09:00 | Adrián [40%]; Luis [40%]; Pablo [40%] |
| 38 | [TDS] Actualizar hoja de metadatos (1/4) | 0.12d | 2017-11-10 12:12 | 2017-11-10 15:09 | 37 | start no earlier than 2017-11-10 09:00 | Adrián [13%]; Luis [13%]; Pablo [13%] |
| 39 | [TDS] Añadir elementos sonoros a la Cue Sheet (2/5) | 0.25d | 2017-11-10 09:00 | 2017-11-10 11:00 |  | start no earlier than 2017-11-10 09:00 | Luis [13%]; Pablo [13%]; Adrián [13%] |
| 41 | [PD] Diseño final del logo de la empresa | 2d | 2017-11-13 09:00 | 2017-11-14 19:00 | 21 | start no earlier than 2017-11-13 09:00 | Alexei [21%]; Laura [21%]; Luis [21%] |
| 44 | [PM] Realizar informe iteración 2 | 0.75d | 2017-11-15 09:00 | 2017-11-15 17:00 | 26, 27, 28, 40, 29, 30, 32, 36, 41, 42, 43 |  | Laura [25%]; Luis [25%]; Pablo [25%] |

Removed: 32 [RV] Boceto de los personajes

Changed:

| ID | Task | Start | Finish | Duration | Complete | Total float | Predecessors | Other |
| --- | --- | --- | --- | --- | --- | --- | --- | --- |
| 1 | **Hito 0** |  | 2017-10-18 19:00 A |  | 99% → 100% |  |  |  |
| 11 | [TDS] Elaboración Cue Sheet inicial |  | 2017-10-04 18:02 A |  | 99% → 100% | 10.12d → none |  |  |
| 12 | **Hito 1** | 2017-10-19 15:00 A |  |  | 0% → 11% | 8.55d → 106.25d |  |  |
| 13 | **Iteración 1** | 2017-10-19 15:00 A |  |  | 0% → 98% | 7.8d → 7.05d |  |  |
| 14 | [PM] Registrar tiempos y % de realización de tareas en Project (1/5) | 2017-10-19 15:00 A | 2017-10-31 19:00 A |  | 0% → 100% | 8.55d → none |  |  |
| 15 | [PD] Bocetar cartel | 2017-10-20 09:00 A | 2017-10-20 17:00 A |  | 0% → 100% | 15.3d → none |  |  |
| 16 | [TAG] Instalar librería matemática (glm/glmatriz) | 2017-10-24 09:00 A | 2017-10-24 13:00 A |  | 0% → 100% | 14.05d → none |  |  |
| 17 | [TAG] Instalar librería de lectura de mallas (assimp…) | 2017-10-24 17:00 A | 2017-10-25 19:00 A |  | 0% → 100% | 12.55d → none |  |  |
| 18 | [TAG] Instalar librería de entrada/salida (SFML…) | 2017-10-24 17:00 A | 2017-10-25 19:00 A |  | 0% → 100% | 12.55d → none |  |  |
| 19 | [PM] Detallar plan iteraciones del mes de Noviembre. Creación Subtareas y precedencias en Project (1/2) | 2017-10-24 09:00 A | 2017-10-25 10:36 A |  | 0% → 100% | 11.4d → none |  |  |
| 20 | [TDS] Añadir elementos sonoros a la Cue Sheet (1/5) |  |  |  |  | 12.3d → 11.55d |  | was named [TDS] Añadir elementos sonoros a la Cue Sheet |
| 21 | [PD] Bocetar logo | 2017-10-27 09:00 A | 2017-10-27 17:00 A |  | 0% → 100% | 10.3d → none |  |  |
| 22 | [PM] Detallar plan iteraciones del mes de Noviembre. Asignar recursos a las tareas en Project (1/2) | 2017-10-27 09:00 A | 2017-10-30 10:36 A |  | 0% → 100% | 9.6d → none |  |  |
| 23 | [PM] Realizar informe iteración 1 | 2017-11-01 09:00 A | 2017-11-01 17:00 A |  | 0% → 100% | 7.8d → none |  |  |
| 26 | [PM] Registrar tiempos y % de realización de tareas en Project (2/5) |  |  |  |  | 8.05d → 7.3d | 14 → none |  |
| 33 | [V2] Instalación irrLicht | 2017-11-07 15:00 → 2017-11-06 09:00 (-1d) | 2017-11-07 19:00 → 2017-11-06 13:00 (-1d) |  |  | 9.92d → 10.8d |  | constraint finish no earlier than 2017-11-07 19:00 → start no earlier than 2017-11-06 09:00 |
| 36 | [PM] Rellenar documento Gestión de riesgos | 2017-11-16 09:00 → 2017-11-08 09:00 (-8d) | 2017-11-20 12:12 → 2017-11-08 13:00 (-12d) | 2.4d → 0.5d |  | 18.4d → 11.8d |  | constraint none → start no earlier than 2017-11-08 09:00; resources none → Adrián [36%]; Alexei [36%]; Laura [66%]; Luis [66%]; Pablo [36%] |
| 40 | [V2] Realización del sistema de control del player por motor de físicas 2D, dynamic o kinematic | 2017-11-08 09:00 → 2017-11-07 09:00 (-1d) | 2017-11-13 10:02 → 2017-11-09 19:00 (-4d) | 3.13d → 3d |  | 9.92d → 10.3d |  | was named [V2] Control del player por motor de físicas 2D, dynamic o kinematic; constraint none → start no earlier than 2017-11-07 09:00; resources none → Laura [52%]; Luis [52%] |
| 42 | [PM] Detallar plan iteraciones del mes de Noviembre. Creación Subtareas y precedencias en Project (2/2) | 2017-11-02 09:00 → 2017-11-14 09:00 (+12d) | 2017-11-03 10:36 → 2017-11-14 13:00 (+11d) | 1.2d → 0.5d |  | 14.65d → 7.3d |  | constraint none → start no earlier than 2017-11-14 09:00 |
| 43 | [PM] Detallar plan iteraciones del mes de Noviembre. Asignar recursos a las tareas en Project (2/2) | 2017-11-03 10:36 → 2017-11-14 15:00 (+11d) | 2017-11-06 12:12 → 2017-11-14 19:00 (+8d) | 1.2d → 0.5d |  | 14.65d → 7.3d |  | constraint none → finish no earlier than 2017-11-06 19:00 |
| 45 | Objetivo iteración 2 | 2017-11-14 19:00 → 2017-11-15 17:00 (+1d) | 2017-11-14 19:00 → 2017-11-15 17:00 (+1d) |  |  | 8.05d → 7.3d | 26, 27, 28, 42, 43, [RV] Boceto de los personajes, 40 → 44 |  |
| 58 | Objetivo iteración 3 |  |  |  |  |  | 47, 48, 49, 36, 53, 54, 55, 56, 57 → 47, 48, 49, 53, 54, 55, 56, 57 |  |
| 80 | [TDS] Síntesis | 2017-12-15 18:02 → 2017-12-15 16:02 | 2017-12-21 16:02 → 2017-12-21 12:02 |  |  | 12.62d → 12.87d |  |  |
| 81 | [TDS] Grabaciones propias | 2017-12-15 18:02 → 2017-12-15 16:02 | 2017-12-21 16:02 → 2017-12-21 12:02 |  |  | 16.37d → 16.62d |  |  |
| 82 | [TDS] Sonidos externos | 2017-12-15 18:02 → 2017-12-15 16:02 | 2017-12-21 16:02 → 2017-12-21 12:02 |  |  | 16.37d → 16.62d |  |  |
| 83 | [TDS] Música | 2017-12-21 16:02 → 2017-12-21 12:02 | 2017-12-27 12:02 → 2017-12-27 10:02 |  |  | 12.62d → 12.87d |  |  |
| 84 | [TDS] Cue Sheet |  | 2017-12-15 18:02 → 2017-12-15 16:02 | 1.88d → 1.63d |  | 12.62d → 12.87d |  |  |
